# C&CProject_MasterPlan

How a schedule from MS Project changed from version to version. A marks actual dates.

## Version 1 (saved 2011-10-11)

Note of the change: Commit C&CProject_MasterPlan.mpp

| ID | WBS | Task | Duration | Start | Finish | Total float |
| --- | --- | --- | --- | --- | --- | --- |
| 1 | 1 | **C&C Project** | 1d? | 2011-10-11 | 2011-10-11 | 0d |
| 2 | 1.1 | **Prepare** | 1d? | 2011-10-11 | 2011-10-11 | 0d |
| 3 |  | Meeting for establishing group | 1d? | 2011-10-11 | 2011-10-11 | 0d |
| 4 | 1.1.2 | **Prepare documents, templates, development evironment** | 1d? | 2011-10-11 | 2011-10-11 | 0d |
| 5 |  | Biên bản thành lập nhóm.docx | 1d? | 2011-10-11 | 2011-10-11 | 0d |
| 6 |  | Template for meeting minute | 1d? | 2011-10-11 | 2011-10-11 | 0d |
| 7 |  | Bảng đánh giá công việc.docx | 1d? | 2011-10-11 | 2011-10-11 | 0d |
| 8 |  | Template MemberTracking.xls | 1d? | 2011-10-11 | 2011-10-11 | 0d |
| 9 |  | Template ScreenDesign.xls | 1d? | 2011-10-11 | 2011-10-11 | 0d |
| 10 |  | Template DefectLog.xls | 1d? | 2011-10-11 | 2011-10-11 | 0d |
| 11 |  | Set up project on Google Code | 1d? | 2011-10-11 | 2011-10-11 | 0d |
| 12 | 1.1.3 | **Study** | 1d? | 2011-10-11 | 2011-10-11 | 0d |
| 13 | 1.1.3.1 | **HTML/CSS** | 1d? | 2011-10-11 | 2011-10-11 | 0d |
| 14 |  | Demo design site by HTML/CSS | 1d? | 2011-10-11 | 2011-10-11 | 0d |
| 15 | 1.1.3.2 | **PHP** | 1d? | 2011-10-11 | 2011-10-11 | 0d |
| 16 |  | Demo login by PHP, MySQL | 1d? | 2011-10-11 | 2011-10-11 | 0d |
| 17 |  | Demo login by PHP, MySQL | 1d? | 2011-10-11 | 2011-10-11 | 0d |
| 18 |  | Demo login by PHP, MySQL | 1d? | 2011-10-11 | 2011-10-11 | 0d |
| 19 |  | Demo login by PHP, MySQL | 1d? | 2011-10-11 | 2011-10-11 | 0d |
| 20 |  | Demo login by PHP, MySQL | 1d? | 2011-10-11 | 2011-10-11 | 0d |
| 21 |  | Demo login by PHP, MySQL | 1d? | 2011-10-11 | 2011-10-11 | 0d |
| 22 |  | Demo login by PHP, MySQL | 1d? | 2011-10-11 | 2011-10-11 | 0d |
| 23 |  | Demo login by PHP, MySQL | 1d? | 2011-10-11 | 2011-10-11 | 0d |
| 24 |  | Demo login by PHP, MySQL | 1d? | 2011-10-11 | 2011-10-11 | 0d |
| 25 |  | Demo login by PHP, MySQL | 1d? | 2011-10-11 | 2011-10-11 | 0d |
| 26 |  | Demo login by PHP, MySQL | 1d? | 2011-10-11 | 2011-10-11 | 0d |
| 27 | 1.1.3.3 | **Zend Framework** | 1d? | 2011-10-11 | 2011-10-11 | 0d |
| 28 |  | MVC model and Zend Framework introduction | 1d? | 2011-10-11 | 2011-10-11 | 0d |
| 29 |  | Set up muti-module project by Zend Studio | 1d? | 2011-10-11 | 2011-10-11 | 0d |
| 30 |  | Demo login by Zend Framework | 1d? | 2011-10-11 | 2011-10-11 | 0d |
| 31 |  | Demo login by Zend Framework | 1d? | 2011-10-11 | 2011-10-11 | 0d |
| 32 |  | Demo login by Zend Framework | 1d? | 2011-10-11 | 2011-10-11 | 0d |
| 33 |  | Demo login by Zend Framework | 1d? | 2011-10-11 | 2011-10-11 | 0d |
| 34 |  | Demo login by Zend Framework | 1d? | 2011-10-11 | 2011-10-11 | 0d |
| 35 |  | Demo login by Zend Framework | 1d? | 2011-10-11 | 2011-10-11 | 0d |
| 36 |  | Demo login by Zend Framework | 1d? | 2011-10-11 | 2011-10-11 | 0d |
| 37 |  | Demo login by Zend Framework | 1d? | 2011-10-11 | 2011-10-11 | 0d |
| 38 |  | Demo login by Zend Framework | 1d? | 2011-10-11 | 2011-10-11 | 0d |
| 39 |  | Demo login by Zend Framework | 1d? | 2011-10-11 | 2011-10-11 | 0d |
| 40 |  | Demo login by Zend Framework | 1d? | 2011-10-11 | 2011-10-11 | 0d |
| 41 |  | Demo simple CMS by Zend Framework | 1d? | 2011-10-11 | 2011-10-11 | 0d |
| 42 | 1.2 | **Analysis and Requirement** | 1d? | 2011-10-11 | 2011-10-11 | 0d |
| 43 |  | Review Software Specification | 1d? | 2011-10-11 | 2011-10-11 | 0d |
| 44 | 1.3 | **Design** | 1d? | 2011-10-11 | 2011-10-11 | 0d |
| 45 | 1.3.1 | **Screen Design** | 1d? | 2011-10-11 | 2011-10-11 | 0d |
| 46 |  | Configuration | 1d? | 2011-10-11 | 2011-10-11 | 0d |
| 47 |  | Content Manager | 1d? | 2011-10-11 | 2011-10-11 | 0d |
| 48 |  | User Manager | 1d? | 2011-10-11 | 2011-10-11 | 0d |
| 49 | 1.3.1.4 | **Media Manager** | 1d? | 2011-10-11 | 2011-10-11 | 0d |
| 50 |  | Media Manager | 1d? | 2011-10-11 | 2011-10-11 | 0d |
| 51 |  | Media Option_Permission | 1d? | 2011-10-11 | 2011-10-11 | 0d |
| 52 |  | Media Option_Component | 1d? | 2011-10-11 | 2011-10-11 | 0d |
| 53 |  | Login | 1d? | 2011-10-11 | 2011-10-11 | 0d |
| 54 |  | Language Manager | 1d? | 2011-10-11 | 2011-10-11 | 0d |
| 55 |  | Layout and navigation | 1d? | 2011-10-11 | 2011-10-11 | 0d |
| 56 |  | Development | 1d? | 2011-10-11 | 2011-10-11 | 0d |
| 57 |  | Testing | 1d? | 2011-10-11 | 2011-10-11 | 0d |
| 58 |  | Documentation | 1d? | 2011-10-11 | 2011-10-11 | 0d |
| 59 |  | Deployment & Pilot | 1d? | 2011-10-11 | 2011-10-11 | 0d |

## Version 2 (saved 2011-10-12)

Note of the change: Them task Menu Manager cho ThiVT

Last finish stays 2011-10-11.

Added:

| ID | Task | Duration | Start | Finish | Resources |
| --- | --- | --- | --- | --- | --- |
| 46 | Menu Manager | 1d? | 2011-10-11 | 2011-10-11 | ThiVT |

## Version 3 (saved 2011-10-13)

Note of the change: Update project plan.

Last finish 2011-10-11 → 2012-01-13 (+94d). Complete tasks 0 → 59.

Added:

| ID | Task | Duration | Start | Finish | Constraint | Resources |
| --- | --- | --- | --- | --- | --- | --- |
| 42 | **How to build CMS Project** | 2d | 2011-10-03 A | 2011-10-03 A |  |  |
| 43 | Study book "How to build a full CMS project" and give idea | 2d | 2011-10-03 A | 2011-10-03 A | finish no earlier than 2011-10-05 | ThaoNX |
| 44 | Study book "How to build a full CMS project" and give idea | 2d | 2011-10-03 A | 2011-10-03 A | finish no earlier than 2011-10-05 | HuyDV |
| 45 | Study book "How to build a full CMS project" and give idea | 2d | 2011-10-03 A | 2011-10-03 A | finish no earlier than 2011-10-05 | DungDV |
| 46 | Study book "How to build a full CMS project" and give idea | 2d | 2011-10-03 A | 2011-10-03 A | finish no earlier than 2011-10-05 | DucNH |
| 47 | Study book "How to build a full CMS project" and give idea | 2d | 2011-10-03 A | 2011-10-03 A | finish no earlier than 2011-10-05 | HienTT |
| 48 | Study book "How to build a full CMS project" and give idea | 2d | 2011-10-03 A | 2011-10-03 A | finish no earlier than 2011-10-05 | HuyDV |
| 49 | Study book "How to build a full CMS project" and give idea | 2d | 2011-10-03 A | 2011-10-03 A | finish no earlier than 2011-10-05 | HuyNVK |
| 50 | Study book "How to build a full CMS project" and give idea | 2d | 2011-10-03 A | 2011-10-03 A | finish no earlier than 2011-10-05 | LinhTA |
| 51 | Study book "How to build a full CMS project" and give idea | 2d | 2011-10-03 A | 2011-10-03 A | finish no earlier than 2011-10-05 | ThanhCV |
| 52 | Study book "How to build a full CMS project" and give idea | 2d | 2011-10-03 A | 2011-10-03 A | finish no earlier than 2011-10-05 | ThaoNX |
| 53 | Study book "How to build a full CMS project" and give idea | 2d | 2011-10-03 A | 2011-10-03 A | finish no earlier than 2011-10-05 | ThiVT |
| 61 | Acticle Manager + Copy Acticle + Move Acticle + Global Configuration Pop-up Window | 2d | 2011-10-06 A | 2011-10-06 A | finish no earlier than 2011-10-07 | DucNH |
| 62 | Section Manager + Category Manager + Front Page Manager | 2d | 2011-10-06 A | 2011-10-06 A | finish no earlier than 2011-10-07 | DungDV |
| 63 | Section Edit + Category Edit + Acticle Edit | 2d | 2011-10-06 A | 2011-10-06 A | finish no earlier than 2011-10-07 | TuTM |
| 65 | User Manager | 2d | 2011-10-06 A | 2011-10-06 A | finish no earlier than 2011-10-07 | KhoaVT |
| 66 | New User + Edit User | 2d | 2011-10-06 A | 2011-10-06 A | finish no earlier than 2011-10-07 | ThanhCV |
| 73 | **Re-define Component using Screen Design Template** | 1d | 2011-10-14 | 2011-10-14 |  |  |
| 74 | Menu Manager | 1d | 2011-10-14 | 2011-10-14 | start no earlier than 2011-10-14 | ThiVT |
| 75 | Configuaraion | 1d | 2011-10-14 | 2011-10-14 | start no earlier than 2011-10-14 | ThaoNX |
| 76 | **Content Manager** | 1d | 2011-10-14 | 2011-10-14 |  |  |
| 77 | Acticle Manager + Copy Manager + Move Acticle + Global Configuration Pop-up Window | 1d | 2011-10-14 | 2011-10-14 | start no earlier than 2011-10-14 | DucNH |
| 78 | Section Manager + Category Manager + Front Page Manager | 1d | 2011-10-14 | 2011-10-14 | start no earlier than 2011-10-14 | DungDV |
| 79 | Section Edit + Category Edit + Acticle Edit | 1d | 2011-10-14 | 2011-10-14 | start no earlier than 2011-10-14 | TuTM |
| 80 | **User Manager** | 1d | 2011-10-14 | 2011-10-14 |  |  |
| 81 | User Manager | 1d | 2011-10-14 | 2011-10-14 | start no earlier than 2011-10-14 | KhoaVT |
| 82 | New User + Edit User | 1d | 2011-10-14 | 2011-10-14 | start no earlier than 2011-10-14 | ThanhCV |
| 83 | Login | 1d | 2011-10-14 | 2011-10-14 | start no earlier than 2011-10-14 | LinhTA |
| 84 | Language Manager | 1d | 2011-10-14 | 2011-10-14 | start no earlier than 2011-10-14 | LinhTA |
| 85 | Layout and Navigation | 1d | 2011-10-14 | 2011-10-14 | start no earlier than 2011-10-14 | HuyDV |
| 86 | **Study PHP, MySQL and Zend Frame Work** | 10d | 2011-10-14 | 2011-10-17 |  |  |
| 87 | Demo login using PHP, MySQL | 2d | 2011-10-14 | 2011-10-14 | start no earlier than 2011-10-14 | TuanVA |
| 88 | Demo login using PHP, MySQL | 2d | 2011-10-14 | 2011-10-14 | start no earlier than 2011-10-14 | BaoNDD |
| 89 | Study Book "How to build a full CMS" and give idea. | 2d | 2011-10-17 | 2011-10-17 | start no earlier than 2011-10-17 | TuanVA |
| 90 | Study Book "How to build a full CMS" and give idea. | 2d | 2011-10-17 | 2011-10-17 | start no earlier than 2011-10-17 | BaoNDD |
| 91 | **Screen Prototype** | 4d | 2011-10-15 A | 2011-10-15 |  |  |
| 92 | Menu Manager | 2d | 2011-10-15 | 2011-10-15 | start no earlier than 2011-10-15 | ThiVT |
| 93 | Configuaraion | 2d | 2011-10-15 | 2011-10-15 | start no earlier than 2011-10-15 | ThaoNX |
| 94 | **Content Manager** | 2d | 2011-10-15 | 2011-10-15 |  |  |
| 95 | Acticle Manager + Copy Manager + Move Acticle + Global Configuration Pop-up Window | 2d | 2011-10-15 | 2011-10-15 | start no earlier than 2011-10-15 | DucNH |
| 96 | Section Manager + Category Manager + Front Page Manager | 2d | 2011-10-15 | 2011-10-15 | start no earlier than 2011-10-15 | DungDV |
| 97 | Section Edit + Category Edit + Acticle Edit | 2d | 2011-10-15 | 2011-10-15 | start no earlier than 2011-10-15 | TuTM |
| 98 | **User Manager** | 2d | 2011-10-15 | 2011-10-15 |  |  |
| 99 | User Manager | 2d | 2011-10-15 | 2011-10-15 | start no earlier than 2011-10-15 | KhoaVT |
| 100 | New User + Edit User | 2d | 2011-10-15 | 2011-10-15 | start no earlier than 2011-10-15 | ThanhCV |
| 101 | **Media Manager** | 4d | 2011-10-15 A | 2011-10-15 A |  |  |
| 102 | Media Manager | 2d | 2011-10-15 A | 2011-10-15 A | start no earlier than 2011-10-15 | HienTT |
| 103 | Media Option | 4d | 2011-10-15 A | 2011-10-15 A | start no earlier than 2011-10-15 | HuyNVK |
| 104 | Login | 2d | 2011-10-15 | 2011-10-15 | start no earlier than 2011-10-15 | LinhTA |
| 105 | Language Manager | 2d | 2011-10-15 | 2011-10-15 | start no earlier than 2011-10-15 | LinhTA |
| 106 | Layout and Navigation | 2d | 2011-10-15 | 2011-10-15 | start no earlier than 2011-10-15 | HuyDV |
| 107 | **Mapping screen items to Database** | 1d | 2011-10-18 | 2011-10-18 |  |  |
| 108 | Menu Manager | 1d | 2011-10-18 | 2011-10-18 | start no earlier than 2011-10-18 | ThiVT |
| 109 | Configuaraion | 1d | 2011-10-18 | 2011-10-18 | start no earlier than 2011-10-18 | ThaoNX |
| 110 | **Content Manager** | 1d | 2011-10-18 | 2011-10-18 |  |  |
| 111 | Acticle Manager + Copy Manager + Move Acticle + Global Configuration Pop-up Window | 1d | 2011-10-18 | 2011-10-18 | start no earlier than 2011-10-18 | DucNH |
| 112 | Section Manager + Category Manager + Front Page Manager | 1d | 2011-10-18 | 2011-10-18 | start no earlier than 2011-10-18 | DungDV |
| 113 | Section Edit + Category Edit + Acticle Edit | 1d | 2011-10-18 | 2011-10-18 | start no earlier than 2011-10-18 | TuTM |
| 114 | **User Manager** | 1d | 2011-10-18 | 2011-10-18 |  |  |
| 115 | User Manager | 1d | 2011-10-18 | 2011-10-18 | start no earlier than 2011-10-18 | KhoaVT |
| 116 | New User + Edit User | 1d | 2011-10-18 | 2011-10-18 | start no earlier than 2011-10-18 | ThanhCV |
| 117 | **Media Manager** | 1d | 2011-10-18 | 2011-10-18 |  |  |
| 118 | Media Manager | 1d | 2011-10-18 | 2011-10-18 | start no earlier than 2011-10-18 | TuanVA |
| 119 | Media Option | 1d | 2011-10-18 | 2011-10-18 | start no earlier than 2011-10-18 | BaoNDD |
| 120 | Login | 1d | 2011-10-18 | 2011-10-18 | start no earlier than 2011-10-18 | LinhTA |
| 121 | Language Manager | 1d | 2011-10-18 | 2011-10-18 | start no earlier than 2011-10-18 | LinhTA |
| 122 | Layout and Navigation | 1d | 2011-10-18 | 2011-10-18 | start no earlier than 2011-10-18 | HuyDV |
| 123 | **Events** | 1d | 2011-10-19 | 2011-10-19 |  |  |
| 124 | Menu Manager | 1d | 2011-10-19 | 2011-10-19 | start no earlier than 2011-10-19 | ThiVT |
| 125 | Configuaraion | 1d | 2011-10-19 | 2011-10-19 | start no earlier than 2011-10-19 | ThaoNX |
| 126 | **Content Manager** | 1d | 2011-10-19 | 2011-10-19 |  |  |
| 127 | Acticle Manager + Copy Manager + Move Acticle + Global Configuration Pop-up Window | 1d | 2011-10-19 | 2011-10-19 | start no earlier than 2011-10-19 | DucNH |
| 128 | Section Manager + Category Manager + Front Page Manager | 1d | 2011-10-19 | 2011-10-19 | start no earlier than 2011-10-19 | DungDV |
| 129 | Section Edit + Category Edit + Acticle Edit | 1d | 2011-10-19 | 2011-10-19 | start no earlier than 2011-10-19 | TuTM |
| 130 | **User Manager** | 1d | 2011-10-19 | 2011-10-19 |  |  |
| 131 | User Manager | 1d | 2011-10-19 | 2011-10-19 | start no earlier than 2011-10-19 | KhoaVT |
| 132 | New User + Edit User | 1d | 2011-10-19 | 2011-10-19 | start no earlier than 2011-10-19 | ThanhCV |
| 133 | **Media Manager** | 1d | 2011-10-19 | 2011-10-19 |  |  |
| 134 | Media Manager | 1d | 2011-10-19 | 2011-10-19 | start no earlier than 2011-10-19 | TuanVA |
| 135 | Media Option | 1d | 2011-10-19 | 2011-10-19 | start no earlier than 2011-10-19 | BaoNDD |
| 136 | Login | 1d | 2011-10-19 | 2011-10-19 | start no earlier than 2011-10-19 | LinhTA |
| 137 | Language Manager | 1d | 2011-10-19 | 2011-10-19 | start no earlier than 2011-10-19 | LinhTA |
| 138 | Layout and Navigation | 1d | 2011-10-19 | 2011-10-19 | start no earlier than 2011-10-19 | HuyDV |

Removed: 52 Media Option_Permission

Changed:

| ID | Task | Start | Finish | Duration | Complete | Total float | Predecessors | Other |
| --- | --- | --- | --- | --- | --- | --- | --- | --- |
| 1 | **C&C Project** | 2011-10-11 → 2011-09-15 A (-26d) | 2011-10-11 → 2012-01-13 (+94d) | 1d? → 416d? | 0% → 30% |  |  |  |
| 2 | **Prepare** | 2011-10-11 → 2011-09-15 A (-26d) | 2011-10-11 → 2011-10-03 A (-8d) | 1d? → 62d | 0% → 100% | 0d → none |  |  |
| 3 | Meeting for establishing group | 2011-10-11 → 2011-09-15 A (-26d) | 2011-10-11 → 2011-09-15 A (-26d) | 1d? → 1d | 0% → 100% | 0d → none |  | constraint none → start no earlier than 2011-09-15 |
| 4 | **Prepare documents, templates, development evironment** | 2011-10-11 → 2011-09-15 A (-26d) | 2011-10-11 → 2011-09-15 A (-26d) | 1d? → 0.5d | 0% → 100% | 0d → none |  |  |
| 5 | Biên bản thành lập nhóm.docx | 2011-10-11 → 2011-09-15 A (-26d) | 2011-10-11 → 2011-09-15 A (-26d) | 1d? → 0.5d | 0% → 100% | 0d → none |  |  |
| 6 | Template for meeting minute | 2011-10-11 → 2011-09-15 A (-26d) | 2011-10-11 → 2011-09-15 A (-26d) | 1d? → 0.5d | 0% → 100% | 0d → none |  |  |
| 7 | Bảng đánh giá công việc.docx | 2011-10-11 → 2011-09-15 A (-26d) | 2011-10-11 → 2011-09-15 A (-26d) | 1d? → 0.5d | 0% → 100% | 0d → none |  |  |
| 8 | Template MemberTracking.xls | 2011-10-11 → 2011-09-15 A (-26d) | 2011-10-11 → 2011-09-15 A (-26d) | 1d? → 0.5d | 0% → 100% | 0d → none |  | constraint none → finish no earlier than 2011-09-16 |
| 9 | Template ScreenDesign.xls | 2011-10-11 → 2011-09-15 A (-26d) | 2011-10-11 → 2011-09-15 A (-26d) | 1d? → 0.5d | 0% → 100% | 0d → none |  | constraint none → finish no earlier than 2011-09-16 |
| 10 | Template DefectLog.xls | 2011-10-11 → 2011-09-15 A (-26d) | 2011-10-11 → 2011-09-15 A (-26d) | 1d? → 0.5d | 0% → 100% | 0d → none |  | constraint none → finish no earlier than 2011-09-16 |
| 11 | Set up project on Google Code | 2011-10-11 → 2011-09-15 A (-26d) | 2011-10-11 → 2011-09-15 A (-26d) | 1d? → 0.5d | 0% → 100% | 0d → none |  | constraint none → finish no earlier than 2011-09-16 |
| 12 | **Study** | 2011-10-11 → 2011-09-15 A (-26d) | 2011-10-11 → 2011-10-03 A (-8d) | 1d? → 62d | 0% → 100% | 0d → none |  |  |
| 13 | **HTML/CSS** | 2011-10-11 → 2011-09-15 A (-26d) | 2011-10-11 → 2011-09-15 A (-26d) | 1d? → 2d | 0% → 100% | 0d → none |  |  |
| 14 | Demo design site by HTML/CSS | 2011-10-11 → 2011-09-15 A (-26d) | 2011-10-11 → 2011-09-15 A (-26d) | 1d? → 2d | 0% → 100% | 0d → none |  | constraint none → finish no earlier than 2011-09-19 |
| 15 | **PHP** | 2011-10-11 → 2011-09-19 A (-22d) | 2011-10-11 → 2011-09-19 A (-22d) | 1d? → 3d | 0% → 100% | 0d → none |  |  |
| 16 | Demo login by PHP, MySQL | 2011-10-11 → 2011-09-19 A (-22d) | 2011-10-11 → 2011-09-19 A (-22d) | 1d? → 3d | 0% → 100% | 0d → none |  | constraint none → finish no earlier than 2011-09-23 |
| 17 | Demo login by PHP, MySQL | 2011-10-11 → 2011-09-19 A (-22d) | 2011-10-11 → 2011-09-19 A (-22d) | 1d? → 3d | 0% → 100% | 0d → none |  | constraint none → finish no earlier than 2011-09-23 |
| 18 | Demo login by PHP, MySQL | 2011-10-11 → 2011-09-19 A (-22d) | 2011-10-11 → 2011-09-19 A (-22d) | 1d? → 3d | 0% → 100% | 0d → none |  | constraint none → finish no earlier than 2011-09-23 |
| 19 | Demo login by PHP, MySQL | 2011-10-11 → 2011-09-19 A (-22d) | 2011-10-11 → 2011-09-19 A (-22d) | 1d? → 3d | 0% → 100% | 0d → none |  | constraint none → finish no earlier than 2011-09-23 |
| 20 | Demo login by PHP, MySQL | 2011-10-11 → 2011-09-19 A (-22d) | 2011-10-11 → 2011-09-19 A (-22d) | 1d? → 3d | 0% → 100% | 0d → none |  | constraint none → finish no earlier than 2011-09-23 |
| 21 | Demo login by PHP, MySQL | 2011-10-11 → 2011-09-19 A (-22d) | 2011-10-11 → 2011-09-19 A (-22d) | 1d? → 3d | 0% → 100% | 0d → none |  | constraint none → finish no earlier than 2011-09-23 |
| 22 | Demo login by PHP, MySQL | 2011-10-11 → 2011-09-19 A (-22d) | 2011-10-11 → 2011-09-19 A (-22d) | 1d? → 3d | 0% → 100% | 0d → none |  | constraint none → finish no earlier than 2011-09-23 |
| 23 | Demo login by PHP, MySQL | 2011-10-11 → 2011-09-19 A (-22d) | 2011-10-11 → 2011-09-19 A (-22d) | 1d? → 3d | 0% → 100% | 0d → none |  | constraint none → finish no earlier than 2011-09-23 |
| 24 | Demo login by PHP, MySQL | 2011-10-11 → 2011-09-19 A (-22d) | 2011-10-11 → 2011-09-19 A (-22d) | 1d? → 3d | 0% → 100% | 0d → none |  | constraint none → finish no earlier than 2011-09-23 |
| 25 | Demo login by PHP, MySQL | 2011-10-11 → 2011-09-19 A (-22d) | 2011-10-11 → 2011-09-19 A (-22d) | 1d? → 3d | 0% → 100% | 0d → none |  | constraint none → finish no earlier than 2011-09-23 |
| 26 | Demo login by PHP, MySQL | 2011-10-11 → 2011-09-19 A (-22d) | 2011-10-11 → 2011-09-19 A (-22d) | 1d? → 3d | 0% → 100% | 0d → none |  | constraint none → finish no earlier than 2011-09-23 |
| 27 | **Zend Framework** | 2011-10-11 → 2011-09-15 A (-26d) | 2011-10-11 → 2011-09-26 A (-15d) | 1d? → 40d | 0% → 100% | 0d → none |  |  |
| 28 | MVC model and Zend Framework introduction | 2011-10-11 → 2011-09-15 A (-26d) | 2011-10-11 → 2011-09-15 A (-26d) | 1d? → 2d | 0% → 100% | 0d → none |  | constraint none → start no earlier than 2011-09-15 |
| 29 | Set up muti-module project by Zend Studio | 2011-10-11 → 2011-09-15 A (-26d) | 2011-10-11 → 2011-09-15 A (-26d) | 1d? → 1d | 0% → 100% | 0d → none |  | constraint none → start no earlier than 2011-09-15 |
| 30 | Demo login by Zend Framework | 2011-10-11 → 2011-09-26 A (-15d) | 2011-10-11 → 2011-09-26 A (-15d) | 1d? → 3d | 0% → 100% | 0d → none |  | constraint none → finish no earlier than 2011-09-30 |
| 31 | Demo login by Zend Framework | 2011-10-11 → 2011-09-26 A (-15d) | 2011-10-11 → 2011-09-26 A (-15d) | 1d? → 3d | 0% → 100% | 0d → none |  | constraint none → finish no earlier than 2011-09-30 |
| 32 | Demo login by Zend Framework | 2011-10-11 → 2011-09-26 A (-15d) | 2011-10-11 → 2011-09-26 A (-15d) | 1d? → 3d | 0% → 100% | 0d → none |  | constraint none → finish no earlier than 2011-09-30 |
| 33 | Demo login by Zend Framework | 2011-10-11 → 2011-09-26 A (-15d) | 2011-10-11 → 2011-09-26 A (-15d) | 1d? → 3d | 0% → 100% | 0d → none |  | constraint none → finish no earlier than 2011-09-30 |
| 34 | Demo login by Zend Framework | 2011-10-11 → 2011-09-26 A (-15d) | 2011-10-11 → 2011-09-26 A (-15d) | 1d? → 3d | 0% → 100% | 0d → none |  | constraint none → finish no earlier than 2011-09-30 |
| 35 | Demo login by Zend Framework | 2011-10-11 → 2011-09-26 A (-15d) | 2011-10-11 → 2011-09-26 A (-15d) | 1d? → 3d | 0% → 100% | 0d → none |  | constraint none → finish no earlier than 2011-09-30 |
| 36 | Demo login by Zend Framework | 2011-10-11 → 2011-09-26 A (-15d) | 2011-10-11 → 2011-09-26 A (-15d) | 1d? → 3d | 0% → 100% | 0d → none |  | constraint none → finish no earlier than 2011-09-30 |
| 37 | Demo login by Zend Framework | 2011-10-11 → 2011-09-26 A (-15d) | 2011-10-11 → 2011-09-26 A (-15d) | 1d? → 3d | 0% → 100% | 0d → none |  | constraint none → finish no earlier than 2011-09-30 |
| 38 | Demo login by Zend Framework | 2011-10-11 → 2011-09-26 A (-15d) | 2011-10-11 → 2011-09-26 A (-15d) | 1d? → 3d | 0% → 100% | 0d → none |  | constraint none → finish no earlier than 2011-09-30 |
| 39 | Demo login by Zend Framework | 2011-10-11 → 2011-09-26 A (-15d) | 2011-10-11 → 2011-09-26 A (-15d) | 1d? → 3d | 0% → 100% | 0d → none |  | constraint none → finish no earlier than 2011-09-30 |
| 40 | Demo login by Zend Framework | 2011-10-11 → 2011-09-26 A (-15d) | 2011-10-11 → 2011-09-26 A (-15d) | 1d? → 3d | 0% → 100% | 0d → none |  | constraint none → finish no earlier than 2011-09-30 |
| 41 | Demo simple CMS by Zend Framework | 2011-10-11 → 2011-09-26 A (-15d) | 2011-10-11 → 2011-09-26 A (-15d) | 1d? → 4d | 0% → 100% | 0d → none |  | constraint none → finish no earlier than 2011-10-10 |
| 54 | **Analysis and Requirement** | 2011-10-11 → 2011-10-06 (-5d) | 2011-10-11 → 2011-10-06 (-5d) | 1d? → 4d |  | 0d → 340d |  |  |
| 55 | Review Software Specification | 2011-10-11 → 2011-10-06 (-5d) | 2011-10-11 → 2011-10-06 (-5d) | 1d? → 4d |  | 0d → 340d |  | constraint none → start no earlier than 2011-10-06 |
| 56 | **Design** | 2011-10-11 → 2011-10-06 A (-5d) | 2011-10-11 → 2011-10-19 (+8d) | 1d? → 45d | 0% → 33% | 0d → 299d |  |  |
| 57 | **Screen Component Design** | 2011-10-11 → 2011-10-06 A (-5d) | 2011-10-11 → 2011-10-07 A (-4d) | 1d? → 8d | 0% → 100% | 0d → none |  | was named Screen Design |
| 58 | Menu Manager | 2011-10-11 → 2011-10-06 A (-5d) | 2011-10-11 → 2011-10-06 A (-5d) | 1d? → 2d | 0% → 100% | 0d → none |  | constraint none → finish no earlier than 2011-10-07 |
| 59 | Configuration | 2011-10-11 → 2011-10-06 A (-5d) | 2011-10-11 → 2011-10-06 A (-5d) | 1d? → 2d | 0% → 100% | 0d → none |  | constraint none → finish no earlier than 2011-10-07 |
| 60 | **Content Manager** | 2011-10-11 → 2011-10-06 A (-5d) | 2011-10-11 → 2011-10-06 A (-5d) | 1d? → 2d | 0% → 100% | 0d → none |  |  |
| 64 | **User Manager** | 2011-10-11 → 2011-10-06 A (-5d) | 2011-10-11 → 2011-10-06 A (-5d) | 1d? → 2d | 0% → 100% | 0d → none |  |  |
| 67 | **Media Manager** | 2011-10-11 → 2011-10-06 A (-5d) | 2011-10-11 → 2011-10-06 A (-5d) | 1d? → 2d | 0% → 100% | 0d → none |  |  |
| 68 | Media Manager | 2011-10-11 → 2011-10-06 A (-5d) | 2011-10-11 → 2011-10-06 A (-5d) | 1d? → 2d | 0% → 100% | 0d → none |  | constraint none → finish no earlier than 2011-10-07 |
| 69 | Media Option | 2011-10-11 → 2011-10-06 A (-5d) | 2011-10-11 → 2011-10-06 A (-5d) | 1d? → 2d | 0% → 100% | 0d → none |  | was named Media Option_Component; constraint none → finish no earlier than 2011-10-07 |
| 70 | Login | 2011-10-11 → 2011-10-06 A (-5d) | 2011-10-11 → 2011-10-06 A (-5d) | 1d? → 2d | 0% → 100% | 0d → none |  | constraint none → finish no earlier than 2011-10-07 |
| 71 | Language Manager | 2011-10-11 → 2011-10-06 A (-5d) | 2011-10-11 → 2011-10-06 A (-5d) | 1d? → 2d | 0% → 100% | 0d → none |  | constraint none → finish no earlier than 2011-10-07 |
| 72 | Layout and navigation | 2011-10-11 → 2011-10-06 A (-5d) | 2011-10-11 → 2011-10-07 A (-4d) | 1d? → 2d | 0% → 100% | 0d → none |  | constraint none → finish no earlier than 2011-10-07 |
| 139 | Development | 2011-10-11 → 2011-09-15 (-26d) | 2011-10-11 → 2011-11-19 (+39d) | 1d? → 228d? |  | 0d → 180d |  |  |
| 140 | Testing | 2011-10-11 → 2011-11-21 (+41d) | 2011-10-11 → 2011-11-21 (+41d) | 1d? → 4d? |  | 0d → 180d | none → 139 |  |
| 141 | Documentation | 2011-10-11 → 2011-11-22 (+42d) | 2011-10-11 → 2011-11-22 (+42d) | 1d? → 4d? |  | 0d → 180d | none → 140 |  |
| 142 | Deployment & Pilot | 2011-10-11 → 2012-01-13 (+94d) | 2011-10-11 → 2012-01-13 (+94d) | 1d? → 4d? |  |  |  | constraint none → start no earlier than 2012-01-13 |

## Version 4 (saved 2011-10-19)

Note of the change: Commit basic plan for next week.

Last finish stays 2012-01-13. Complete tasks 59 → 108.

Added:

| ID | Task | Duration | Start | Finish | Constraint |
| --- | --- | --- | --- | --- | --- |
| 57 | **Screen Detailed Design** | 45d | 2011-10-06 A | 2011-10-19 A |  |
| 140 | Review Screen Detailed Design | 2d | 2011-10-20 | 2011-10-20 | start no earlier than 2011-10-20 |
| 141 | Function Specification | 1d | 2011-10-24 | 2011-10-24 | start no earlier than 2011-10-24 |
| 142 | Database Design | 1d | 2011-10-27 | 2011-10-27 | start no earlier than 2011-10-27 |

Changed:

| ID | Task | Start | Finish | Duration | Complete | Total float |
| --- | --- | --- | --- | --- | --- | --- |
| 1 | **C&C Project** |  |  |  | 30% → 70% |  |
| 54 | **Analysis and Requirement** | 2011-10-06 A | 2011-10-06 A |  | 0% → 100% | 340d → none |
| 55 | Review Software Specification | 2011-10-06 A | 2011-10-06 A |  | 0% → 100% | 340d → none |
| 56 | **Design** |  | 2011-10-19 → 2011-10-27 (+8d) | 45d → 73d | 33% → 96% | 299d → 271d |
| 74 | **Re-define Component using Screen Design Template** | 2011-10-14 A | 2011-10-14 A |  | 0% → 100% | 315d → none |
| 75 | Menu Manager | 2011-10-14 A | 2011-10-14 A |  | 0% → 100% | 315d → none |
| 76 | Configuaraion | 2011-10-14 A | 2011-10-14 A |  | 0% → 100% | 315d → none |
| 77 | **Content Manager** | 2011-10-14 A | 2011-10-14 A |  | 0% → 100% | 315d → none |
| 78 | Acticle Manager + Copy Manager + Move Acticle + Global Configuration Pop-up Window | 2011-10-14 A | 2011-10-14 A |  | 0% → 100% | 315d → none |
| 79 | Section Manager + Category Manager + Front Page Manager | 2011-10-14 A | 2011-10-14 A |  | 0% → 100% | 315d → none |
| 80 | Section Edit + Category Edit + Acticle Edit | 2011-10-14 A | 2011-10-14 A |  | 0% → 100% | 315d → none |
| 81 | **User Manager** | 2011-10-14 A | 2011-10-14 A |  | 0% → 100% | 315d → none |
| 82 | User Manager | 2011-10-14 A | 2011-10-14 A |  | 0% → 100% | 315d → none |
| 83 | New User + Edit User | 2011-10-14 A | 2011-10-14 A |  | 0% → 100% | 315d → none |
| 84 | Login | 2011-10-14 A | 2011-10-14 A |  | 0% → 100% | 315d → none |
| 85 | Language Manager | 2011-10-14 A | 2011-10-14 A |  | 0% → 100% | 315d → none |
| 86 | Layout and Navigation | 2011-10-14 A | 2011-10-14 A |  | 0% → 100% | 315d → none |
| 87 | **Study PHP, MySQL and Zend Frame Work** | 2011-10-14 A | 2011-10-17 A |  | 0% → 100% | 306d → none |
| 88 | Demo login using PHP, MySQL | 2011-10-14 A | 2011-10-14 A |  | 0% → 100% | 314d → none |
| 89 | Demo login using PHP, MySQL | 2011-10-14 A | 2011-10-14 A |  | 0% → 100% | 314d → none |
| 90 | Study Book "How to build a full CMS" and give idea. | 2011-10-17 A | 2011-10-17 A |  | 0% → 100% | 306d → none |
| 91 | Study Book "How to build a full CMS" and give idea. | 2011-10-17 A | 2011-10-17 A |  | 0% → 100% | 306d → none |
| 92 | **Screen Prototype** |  | 2011-10-15 A | 4d → 3d | 23% → 100% | 308d → none |
| 93 | Menu Manager | 2011-10-15 A | 2011-10-15 A | 2d → 3d | 0% → 100% | 310d → none |
| 94 | Configuaraion | 2011-10-15 A | 2011-10-15 A | 2d → 3d | 0% → 100% | 310d → none |
| 95 | **Content Manager** | 2011-10-15 A | 2011-10-15 A | 2d → 3d | 0% → 100% | 310d → none |
| 96 | Acticle Manager + Copy Manager + Move Acticle + Global Configuration Pop-up Window | 2011-10-15 A | 2011-10-15 A | 2d → 3d | 0% → 100% | 310d → none |
| 97 | Section Manager + Category Manager + Front Page Manager | 2011-10-15 A | 2011-10-15 A | 2d → 3d | 0% → 100% | 310d → none |
| 98 | Section Edit + Category Edit + Acticle Edit | 2011-10-15 A | 2011-10-15 A | 2d → 3d | 0% → 100% | 310d → none |
| 99 | **User Manager** | 2011-10-15 A | 2011-10-15 A | 2d → 3d | 0% → 100% | 310d → none |
| 100 | User Manager | 2011-10-15 A | 2011-10-15 A | 2d → 3d | 0% → 100% | 310d → none |
| 101 | New User + Edit User | 2011-10-15 A | 2011-10-15 A | 2d → 3d | 0% → 100% | 310d → none |
| 102 | **Media Manager** |  |  | 4d → 3d |  |  |
| 103 | Media Manager |  |  | 2d → 3d |  |  |
| 104 | Media Option |  |  | 4d → 3d |  |  |
| 105 | Login | 2011-10-15 A | 2011-10-15 A | 2d → 3d | 0% → 100% | 310d → none |
| 106 | Language Manager | 2011-10-15 A | 2011-10-15 A | 2d → 3d | 0% → 100% | 310d → none |
| 107 | Layout and Navigation | 2011-10-15 A | 2011-10-15 A | 2d → 3d | 0% → 100% | 310d → none |
| 108 | **Mapping screen items to Database** | 2011-10-18 A | 2011-10-18 A |  | 0% → 100% | 303d → none |
| 109 | Menu Manager | 2011-10-18 A | 2011-10-18 A |  | 0% → 100% | 303d → none |
| 110 | Configuaraion | 2011-10-18 A | 2011-10-18 A |  | 0% → 100% | 303d → none |
| 111 | **Content Manager** | 2011-10-18 A | 2011-10-18 A |  | 0% → 100% | 303d → none |
| 112 | Acticle Manager + Copy Manager + Move Acticle + Global Configuration Pop-up Window | 2011-10-18 A | 2011-10-18 A |  | 0% → 100% | 303d → none |
| 113 | Section Manager + Category Manager + Front Page Manager | 2011-10-18 A | 2011-10-18 A |  | 0% → 100% | 303d → none |
| 114 | Section Edit + Category Edit + Acticle Edit | 2011-10-18 A | 2011-10-18 A |  | 0% → 100% | 303d → none |
| 115 | **User Manager** | 2011-10-18 A | 2011-10-18 A |  | 0% → 100% | 303d → none |
| 116 | User Manager | 2011-10-18 A | 2011-10-18 A |  | 0% → 100% | 303d → none |
| 117 | New User + Edit User | 2011-10-18 A | 2011-10-18 A |  | 0% → 100% | 303d → none |
| 118 | **Media Manager** | 2011-10-18 A | 2011-10-18 A |  | 0% → 100% | 303d → none |
| 119 | Media Manager | 2011-10-18 A | 2011-10-18 A |  | 0% → 100% | 303d → none |
| 120 | Media Option | 2011-10-18 A | 2011-10-18 A |  | 0% → 100% | 303d → none |
| 121 | Login | 2011-10-18 A | 2011-10-18 A |  | 0% → 100% | 303d → none |
| 122 | Language Manager | 2011-10-18 A | 2011-10-18 A |  | 0% → 100% | 303d → none |
| 123 | Layout and Navigation | 2011-10-18 A | 2011-10-18 A |  | 0% → 100% | 303d → none |
| 124 | **Events** | 2011-10-19 A | 2011-10-19 A |  | 0% → 100% | 299d → none |
| 125 | Menu Manager | 2011-10-19 A | 2011-10-19 A |  | 0% → 100% | 299d → none |
| 126 | Configuaraion | 2011-10-19 A | 2011-10-19 A |  | 0% → 100% | 299d → none |
| 127 | **Content Manager** | 2011-10-19 A | 2011-10-19 A |  | 0% → 100% | 299d → none |
| 128 | Acticle Manager + Copy Manager + Move Acticle + Global Configuration Pop-up Window | 2011-10-19 A | 2011-10-19 A |  | 0% → 100% | 299d → none |
| 129 | Section Manager + Category Manager + Front Page Manager | 2011-10-19 A | 2011-10-19 A |  | 0% → 100% | 299d → none |
| 130 | Section Edit + Category Edit + Acticle Edit | 2011-10-19 A | 2011-10-19 A |  | 0% → 100% | 299d → none |
| 131 | **User Manager** | 2011-10-19 A | 2011-10-19 A |  | 0% → 100% | 299d → none |
| 132 | User Manager | 2011-10-19 A | 2011-10-19 A |  | 0% → 100% | 299d → none |
| 133 | New User + Edit User | 2011-10-19 A | 2011-10-19 A |  | 0% → 100% | 299d → none |
| 134 | **Media Manager** | 2011-10-19 A | 2011-10-19 A |  | 0% → 100% | 299d → none |
| 135 | Media Manager | 2011-10-19 A | 2011-10-19 A |  | 0% → 100% | 299d → none |
| 136 | Media Option | 2011-10-19 A | 2011-10-19 A |  | 0% → 100% | 299d → none |
| 137 | Login | 2011-10-19 A | 2011-10-19 A |  | 0% → 100% | 299d → none |
| 138 | Language Manager | 2011-10-19 A | 2011-10-19 A |  | 0% → 100% | 299d → none |
| 139 | Layout and Navigation | 2011-10-19 A | 2011-10-19 A |  | 0% → 100% | 299d → none |

| ID | Task | Start | Duration | Other |
| --- | --- | --- | --- | --- |
| 143 | Development | 2011-09-15 → 2011-10-31 (+46d) | 228d? → 72d? | constraint none → start no earlier than 2011-10-31 |

## Version 5 (saved 2011-10-27)

Last finish 2012-01-13 → 2012-02-16 (+34d). Complete tasks 108 → 104.

Added:

| ID | Task | Duration | Start | Finish | Predecessors | Constraint | Resources |
| --- | --- | --- | --- | --- | --- | --- | --- |
| 8 | Template MemberTracking.xls + Template ScreenDesign.xls + Template DefectLog.xls + Set up project on Google Code | 1d | 2011-09-15 A | 2011-09-15 A |  |  | HuyNVK [25%] |
| 66 | Login + Language Manager | 2d | 2011-10-06 A | 2011-10-07 A |  | start no earlier than 2011-10-06 | ThiVT [25%] |
| 70 | Configuration | 1d | 2011-10-14 A | 2011-10-14 A |  | start no earlier than 2011-10-06 | ThaoNX [25%] |
| 72 | Acticle Manager + Copy Acticle + Move Acticle + Global Configuration Pop-up Window | 1d | 2011-10-14 A | 2011-10-14 A |  |  | DucNH [25%] |
| 78 | Login + Language Manager | 1d | 2011-10-14 A | 2011-10-14 A |  | start no earlier than 2011-10-06 | ThiVT [25%] |
| 79 | Layout and navigation | 1d | 2011-10-14 A | 2011-10-14 A |  | start no earlier than 2011-10-06 | HuyDV [25%] |
| 87 | Configuration | 2d | 2011-10-06 A | 2011-10-07 A |  | start no earlier than 2011-10-06 | ThaoNX [25%] |
| 89 | Acticle Manager + Copy Acticle + Move Acticle + Global Configuration Pop-up Window | 2d | 2011-09-15 A | 2011-09-16 A |  |  | DucNH [25%] |
| 98 | Login + Language Manager | 2d | 2011-10-06 A | 2011-10-07 A |  | start no earlier than 2011-10-06 | ThiVT [25%] |
| 99 | Layout and navigation | 2d | 2011-10-06 A | 2011-10-07 A |  | start no earlier than 2011-10-06 | HuyDV [25%] |
| 102 | Configuration | 1d | 2011-10-06 A | 2011-10-06 A |  | start no earlier than 2011-10-06 | ThaoNX [25%] |
| 104 | Acticle Manager + Copy Acticle + Move Acticle + Global Configuration Pop-up Window | 1d | 2011-09-15 A | 2011-09-15 A |  |  | DucNH [25%] |
| 113 | Login + Language Manager | 1d | 2011-10-06 A | 2011-10-06 A |  | start no earlier than 2011-10-06 | ThiVT [25%] |
| 114 | Layout and navigation | 1d | 2011-10-06 A | 2011-10-06 A |  | start no earlier than 2011-10-06 | HuyDV [25%] |
| 117 | Configuration | 1d | 2011-10-06 A | 2011-10-06 A |  | start no earlier than 2011-10-06 | ThaoNX [25%] |
| 119 | Acticle Manager + Copy Acticle + Move Acticle + Global Configuration Pop-up Window | 1d | 2011-09-15 A | 2011-09-15 A |  |  | DucNH [25%] |
| 128 | Login + Language Manager | 1d | 2011-10-06 A | 2011-10-06 A |  | start no earlier than 2011-10-06 | ThiVT [25%] |
| 129 | Layout and navigation | 1d | 2011-10-06 A | 2011-10-06 A |  | start no earlier than 2011-10-06 | HuyDV [25%] |
| 130 | **Review Screen Detailed Design** | 2d | 2011-10-20 A | 2011-10-21 |  |  |  |
| 131 | **Global Config + Menu Manager + User Manager + Content Manager** | 2d | 2011-10-20 A | 2011-10-21 |  |  | ThaoNX + DungDV + ThiVT + KhoaVT [25%] |
| 132 | Make Review Schedule | 1d | 2011-10-20 A | 2011-10-20 A |  | start no earlier than 2011-10-20 | ThaoNX + DungDV + ThiVT + KhoaVT [25%] |
| 133 | Do review, write log to DefectLog | 1d | 2011-10-21 A | 2011-10-21 A |  | start no earlier than 2011-10-20 | ThaoNX + DungDV + ThiVT + KhoaVT [25%] |
| 134 | **Acticle Manager + New & Edit User + Language Manager + Login** | 2d | 2011-10-20 A | 2011-10-21 |  |  | ThanhCV + DucNH + LinhTA + HuyDV [25%] |
| 135 | Make Review Schedule | 1d | 2011-10-20 A | 2011-10-20 A |  | start no earlier than 2011-10-20 | ThanhCV + DucNH + LinhTA + HuyDV [25%] |
| 136 | Do review, write log to DefectLog | 1d | 2011-10-21 A | 2011-10-21 A |  | start no earlier than 2011-10-20 | ThanhCV + DucNH + LinhTA + HuyDV [25%] |
| 137 | **Media Manager + Media Option + Section Edit + Acticle Edit + Category Edit** | 2d | 2011-10-20 A | 2011-10-21 |  |  | TuanVA + BaoNDD + TuTM [25%] |
| 138 | Make Review Schedule | 1d | 2011-10-20 A | 2011-10-20 A |  | start no earlier than 2011-10-20 | TuanVA + BaoNDD + TuTM [25%] |
| 139 | Do review, write log to DefectLog | 1d | 2011-10-21 A | 2011-10-21 A |  | start no earlier than 2011-10-20 | TuanVA + BaoNDD + TuTM [25%] |
| 140 | **Screen Transition** | 1d | 2011-10-24 | 2011-10-24 |  |  |  |
| 141 | ContentManager + GlobalConfiguration | 1d | 2011-10-24 | 2011-10-24 |  | start no earlier than 2011-10-24 | ThaoNX [25%] |
| 142 | MenuManager + MediaManager + UserManager | 1d | 2011-10-24 | 2011-10-24 |  | start no earlier than 2011-10-24 | LinhTA [25%] |
| 143 | **Development** | 6d | 2011-10-24 | 2011-10-29 |  |  |  |
| 144 | **Code Screen Interface using Zend Form** | 6d | 2011-10-24 | 2011-10-29 |  |  |  |
| 145 | **MediaOption + NewMenu** | 6d | 2011-10-24 | 2011-10-29 |  |  | BaoNDD [25%] |
| 146 | Study Zend From and Code the first screen | 3d | 2011-10-24 | 2011-10-26 |  | start no earlier than 2011-10-24 | BaoNDD [25%] |
| 147 | Finish all remaining screens | 3d | 2011-10-27 | 2011-10-29 | 146 | finish no earlier than 2011-10-24 | BaoNDD [25%] |
| 148 | **SectionManager + CategoryManager + FrontPageManager + ActicleEdit** | 6d | 2011-10-24 | 2011-10-29 |  |  | DungDV [25%] |
| 149 | Study Zend From and Code the first screen | 3d | 2011-10-24 | 2011-10-26 |  | start no earlier than 2011-10-24 | DungDV [25%] |
| 150 | Finish all remaining screens | 3d | 2011-10-27 | 2011-10-29 | 149 | finish no earlier than 2011-10-24 | DungDV [25%] |
| 151 | **ActicleManager + ActicleCopy + ActicleGlobalConfig** | 6d | 2011-10-24 | 2011-10-29 |  |  | DucNH [25%] |
| 152 | Study Zend From and Code the first screen | 3d | 2011-10-24 | 2011-10-26 |  | start no earlier than 2011-10-24 | DucNH [25%] |
| 153 | Finish all remaining screens | 3d | 2011-10-27 | 2011-10-29 | 152 | finish no earlier than 2011-10-24 | DucNH [25%] |
| 154 | **Layout for admin module** | 6d | 2011-10-24 | 2011-10-29 |  |  | HuyDV [25%] |
| 155 | Study Zend From and Code the first screen | 3d | 2011-10-24 | 2011-10-26 |  | start no earlier than 2011-10-24 | HuyDV [25%] |
| 156 | Finish all remaining screens | 3d | 2011-10-27 | 2011-10-29 | 155 | finish no earlier than 2011-10-24 | HuyDV [25%] |
| 157 | **LanguageManager + Login** | 6d | 2011-10-24 | 2011-10-29 |  |  | LinhTA [25%] |
| 158 | Study Zend From and Code the first screen | 3d | 2011-10-24 | 2011-10-26 |  | start no earlier than 2011-10-24 | LinhTA [25%] |
| 159 | Finish all remaining screens | 3d | 2011-10-27 | 2011-10-29 | 158 | finish no earlier than 2011-10-24 | LinhTA [25%] |
| 160 | **New&EditUser + EditMenuItem** | 6d | 2011-10-24 | 2011-10-29 |  |  | ThanhCV [25%] |
| 161 | Study Zend From and Code the first screen | 3d | 2011-10-24 | 2011-10-26 |  | start no earlier than 2011-10-24 | ThanhCV [25%] |
| 162 | Finish all remaining screens | 3d | 2011-10-27 | 2011-10-29 | 161 | finish no earlier than 2011-10-24 | ThanhCV [25%] |
| 163 | **Global Configuration** | 6d | 2011-10-24 | 2011-10-29 |  |  | ThaoNX [25%] |
| 164 | Study Zend From and Code the first screen | 3d | 2011-10-24 | 2011-10-26 |  | start no earlier than 2011-10-24 | ThaoNX [25%] |
| 165 | Finish all remaining screens | 3d | 2011-10-27 | 2011-10-29 | 164 | finish no earlier than 2011-10-24 | ThaoNX [25%] |
| 166 | **MenuManager + MenuItemManager** | 6d | 2011-10-24 | 2011-10-29 |  |  | ThiVT [25%] |
| 167 | Study Zend From and Code the first screen | 3d | 2011-10-24 | 2011-10-26 |  | start no earlier than 2011-10-24 | ThiVT [25%] |
| 168 | Finish all remaining screens | 3d | 2011-10-27 | 2011-10-29 | 167 | finish no earlier than 2011-10-24 | ThiVT [25%] |
| 169 | **SectionEdit + ActicleEdit + MoveActicle** | 6d | 2011-10-24 | 2011-10-29 |  |  | TuTM [25%] |
| 170 | Study Zend From and Code the first screen | 3d | 2011-10-24 | 2011-10-26 |  | start no earlier than 2011-10-24 | TuTM [25%] |
| 171 | Finish all remaining screens | 3d | 2011-10-27 | 2011-10-29 | 170 | finish no earlier than 2011-10-24 | TuTM [25%] |
| 172 | **UserManager + NewMenuItem** | 6d | 2011-10-24 | 2011-10-29 |  |  | KhoaVT [25%] |
| 173 | Study Zend From and Code the first screen | 3d | 2011-10-24 | 2011-10-26 |  | start no earlier than 2011-10-24 | KhoaVT [25%] |
| 174 | Finish all remaining screens | 3d | 2011-10-27 | 2011-10-29 | 173 | finish no earlier than 2011-10-24 | KhoaVT [25%] |
| 175 | **MediaManager + CopyMenu + MoveMenu** | 6d | 2011-10-24 | 2011-10-29 |  |  | TuanVA [25%] |
| 176 | Study Zend From and Code the first screen | 3d | 2011-10-24 | 2011-10-26 |  | start no earlier than 2011-10-24 | TuanVA [25%] |
| 177 | Finish all remaining screens | 3d | 2011-10-27 | 2011-10-29 | 176 | finish no earlier than 2011-10-24 | TuanVA [25%] |

Removed: 8 Template MemberTracking.xls; 9 Template ScreenDesign.xls; 10 Template DefectLog.xls; 11 Set up project on Google Code; 40 Demo login by Zend Framework; 57 Screen Detailed Design; 71 Login; 72 Language Manager; 76 Configuaraion; 78 Acticle Manager + Copy Manager + Move Acticle + Global Configuration Pop-up Window; 84 Login; 85 Language Manager; 86 Layout and Navigation; 94 Configuaraion; 96 Acticle Manager + Copy Manager + Move Acticle + Global Configuration Pop-up Window; 105 Login; 106 Language Manager; 107 Layout and Navigation; 110 Configuaraion; 112 Acticle Manager + Copy Manager + Move Acticle + Global Configuration Pop-up Window; 121 Login; 122 Language Manager; 123 Layout and Navigation; 126 Configuaraion; 128 Acticle Manager + Copy Manager + Move Acticle + Global Configuration Pop-up Window; 137 Login; 138 Language Manager; 139 Layout and Navigation; 140 Review Screen Detailed Design; 141 Function Specification; 142 Database Design; 143 Development; 146 Deployment & Pilot

Changed:

| ID | Task | Start | Finish | Duration | Complete | Total float | Other |
| --- | --- | --- | --- | --- | --- | --- | --- |
| 1 | **C&C Project** |  | 2012-01-13 → 2012-02-16 (+34d) | 416d? → 133d | 70% → 69% |  |  |
| 2 | **Prepare** |  | 2011-10-03 A → 2011-10-04 A (+1d) | 62d → 17d |  |  |  |
| 3 | Meeting for establishing group |  |  | 1d → 0.25d |  |  | constraint start no earlier than 2011-09-15 → none |
| 4 | **Prepare documents, templates, development evironment** |  |  | 0.5d → 1d |  |  |  |
| 5 | Biên bản thành lập nhóm.docx |  |  |  |  |  | resources BaoNDD → BaoNDD [25%] |
| 6 | Template for meeting minute |  |  |  |  |  | resources TuTM → TuTM [25%] |
| 7 | Bảng đánh giá công việc.docx |  |  |  |  |  | resources TuanVA → TuanVA [25%] |
| 9 | **Study** |  | 2011-10-03 A → 2011-10-04 A (+1d) | 62d → 17d |  |  |  |
| 10 | **HTML/CSS** | 2011-09-15 A → 2011-09-16 A (+1d) | 2011-09-15 A → 2011-09-19 A (+4d) | 2d → 3d |  |  |  |
| 11 | Demo design site by HTML/CSS | 2011-09-15 A → 2011-09-16 A (+1d) | 2011-09-15 A → 2011-09-19 A (+4d) | 2d → 3d |  |  | constraint finish no earlier than 2011-09-19 → start no earlier than 2011-09-16; resources HuyNVK → HuyNVK [16.7%] |
| 12 | **PHP** | 2011-09-19 A → 2011-09-15 A (-4d) | 2011-09-19 A → 2011-09-22 A (+3d) | 3d → 7d |  |  |  |
| 13 | Demo login by PHP, MySQL |  | 2011-09-19 A → 2011-09-21 A (+2d) |  |  |  | constraint finish no earlier than 2011-09-23 → start no earlier than 2011-09-19; resources DungDV → DungDV [25%] |
| 14 | Demo login by PHP, MySQL |  | 2011-09-19 A → 2011-09-21 A (+2d) |  |  |  | constraint finish no earlier than 2011-09-23 → start no earlier than 2011-10-19; resources DucNH → DucNH [25%] |
| 15 | Demo login by PHP, MySQL |  | 2011-09-19 A → 2011-09-21 A (+2d) |  |  |  | constraint finish no earlier than 2011-09-23 → start no earlier than 2011-09-19; resources HienTT → HienTT [25%] |
| 16 | Demo login by PHP, MySQL |  | 2011-09-19 A → 2011-09-21 A (+2d) |  |  |  | constraint finish no earlier than 2011-09-23 → start no earlier than 2011-09-19; resources HuyDV → HuyDV [25%] |
| 17 | Demo login by PHP, MySQL |  | 2011-09-19 A → 2011-09-21 A (+2d) |  |  |  | constraint finish no earlier than 2011-09-23 → start no earlier than 2011-09-19; resources ThanhCV → HuyNVK [25%] |
| 18 | Demo login by PHP, MySQL |  | 2011-09-19 A → 2011-09-21 A (+2d) |  |  |  | constraint finish no earlier than 2011-09-23 → start no earlier than 2011-09-19; resources ThaoNX → LinhTA [25%] |
| 19 | Demo login by PHP, MySQL |  | 2011-09-19 A → 2011-09-21 A (+2d) |  |  |  | constraint finish no earlier than 2011-09-23 → start no earlier than 2011-09-19; resources TuTM → ThanhCV [25%] |
| 20 | Demo login by PHP, MySQL |  | 2011-09-19 A → 2011-09-22 A (+3d) |  |  |  | constraint finish no earlier than 2011-09-23 → start no earlier than 2011-09-19; resources KhoaVT → ThaoNX [25%] |
| 21 | Demo login by PHP, MySQL | 2011-09-19 A → 2011-09-15 A (-4d) | 2011-09-19 A → 2011-09-15 A (-4d) | 3d → 1d |  |  | constraint finish no earlier than 2011-09-23 → none; resources ThiVT → ThiVT [25%] |
| 22 | Demo login by PHP, MySQL | 2011-09-19 A → 2011-09-15 A (-4d) |  | 3d → 4d |  |  | constraint finish no earlier than 2011-09-23 → none; resources HuyNVK → TuTM [18.8%] |
| 23 | Demo login by PHP, MySQL | 2011-09-19 A → 2011-09-15 A (-4d) | 2011-09-19 A → 2011-09-15 A (-4d) | 3d → 1d |  |  | constraint finish no earlier than 2011-09-23 → none; resources LinhTA → KhoaVT [25%] |
| 24 | **Zend Framework** |  | 2011-09-26 A → 2011-09-29 A (+3d) | 40d → 13d |  |  |  |
| 25 | MVC model and Zend Framework introduction |  | 2011-09-15 A → 2011-09-16 A (+1d) |  |  |  | constraint start no earlier than 2011-09-15 → none; resources ThaoNX → ThaoNX [25%] |
| 26 | Set up muti-module project by Zend Studio |  |  |  |  |  | constraint start no earlier than 2011-09-15 → none; resources HuyDV → HuyDV [25%] |
| 27 | Demo login by Zend Framework |  | 2011-09-26 A → 2011-09-28 A (+2d) |  |  |  | constraint finish no earlier than 2011-09-30 → start no earlier than 2011-10-26; resources DungDV → DungDV [25%] |
| 28 | Demo login by Zend Framework |  | 2011-09-26 A → 2011-09-28 A (+2d) |  |  |  | constraint finish no earlier than 2011-09-30 → start no earlier than 2011-10-26; resources DucNH → DucNH [25%] |
| 29 | Demo login by Zend Framework |  | 2011-09-26 A → 2011-09-28 A (+2d) |  |  |  | constraint finish no earlier than 2011-09-30 → start no earlier than 2011-10-26; resources HienTT → HienTT [25%] |
| 30 | Demo login by Zend Framework |  | 2011-09-26 A → 2011-09-28 A (+2d) |  |  |  | constraint finish no earlier than 2011-09-30 → start no earlier than 2011-10-26; resources HuyDV → HuyNVK [25%] |
| 31 | Demo login by Zend Framework |  | 2011-09-26 A → 2011-09-28 A (+2d) |  |  |  | constraint finish no earlier than 2011-09-30 → start no earlier than 2011-10-26; resources HuyNVK → LinhTA [25%] |
| 32 | Demo login by Zend Framework |  | 2011-09-26 A → 2011-09-28 A (+2d) |  |  |  | constraint finish no earlier than 2011-09-30 → start no earlier than 2011-10-26; resources LinhTA → ThanhCV [25%] |
| 33 | Demo login by Zend Framework |  | 2011-09-26 A → 2011-09-28 A (+2d) |  |  |  | constraint finish no earlier than 2011-09-30 → start no earlier than 2011-10-26; resources ThanhCV → ThaoNX [25%] |
| 34 | Demo login by Zend Framework |  | 2011-09-26 A → 2011-09-28 A (+2d) |  |  |  | constraint finish no earlier than 2011-09-30 → start no earlier than 2011-10-26; resources ThaoNX → ThiVT [25%] |
| 35 | Demo login by Zend Framework |  | 2011-09-26 A → 2011-09-28 A (+2d) |  |  |  | constraint finish no earlier than 2011-09-30 → start no earlier than 2011-10-26; resources ThiVT → TuTM [25%] |
| 36 | Demo login by Zend Framework |  | 2011-09-26 A → 2011-09-28 A (+2d) |  |  |  | constraint finish no earlier than 2011-09-30 → start no earlier than 2011-10-26; resources TuTM → KhoaVT [25%] |
| 37 | Demo simple CMS by Zend Framework |  | 2011-09-26 A → 2011-09-29 A (+3d) |  |  |  | constraint finish no earlier than 2011-10-10 → start no earlier than 2011-09-26; resources HuyDV → HuyDV [25%] |
| 38 | **How to build CMS Project** |  | 2011-10-03 A → 2011-10-04 A (+1d) |  |  |  |  |
| 39 | Study book "How to build a full CMS project" and give idea |  | 2011-10-03 A → 2011-10-04 A (+1d) |  |  |  | constraint finish no earlier than 2011-10-05 → start no earlier than 2011-10-03; resources ThaoNX → DungDV [25%] |
| 40 | Study book "How to build a full CMS project" and give idea |  | 2011-10-03 A → 2011-10-04 A (+1d) |  |  |  | constraint finish no earlier than 2011-10-05 → start no earlier than 2011-10-03; resources HuyDV → DucNH [25%] |
| 41 | Study book "How to build a full CMS project" and give idea |  | 2011-10-03 A → 2011-10-04 A (+1d) |  |  |  | constraint finish no earlier than 2011-10-05 → start no earlier than 2011-10-03; resources DungDV → HienTT [25%] |
| 42 | Study book "How to build a full CMS project" and give idea |  | 2011-10-03 A → 2011-10-04 A (+1d) |  |  |  | constraint finish no earlier than 2011-10-05 → start no earlier than 2011-10-03; resources DucNH → HuyNVK [25%] |
| 43 | Study book "How to build a full CMS project" and give idea |  | 2011-10-03 A → 2011-10-04 A (+1d) |  |  |  | constraint finish no earlier than 2011-10-05 → start no earlier than 2011-10-03; resources HienTT → LinhTA [25%] |
| 44 | Study book "How to build a full CMS project" and give idea |  | 2011-10-03 A → 2011-10-04 A (+1d) |  |  |  | constraint finish no earlier than 2011-10-05 → start no earlier than 2011-10-03; resources HuyDV → ThanhCV [25%] |
| 45 | Study book "How to build a full CMS project" and give idea |  | 2011-10-03 A → 2011-10-04 A (+1d) |  |  |  | constraint finish no earlier than 2011-10-05 → start no earlier than 2011-10-03; resources HuyNVK → ThaoNX [25%] |
| 46 | Study book "How to build a full CMS project" and give idea |  | 2011-10-03 A → 2011-10-04 A (+1d) |  |  |  | constraint finish no earlier than 2011-10-05 → start no earlier than 2011-10-03; resources LinhTA → ThiVT [25%] |
| 47 | Study book "How to build a full CMS project" and give idea |  | 2011-10-03 A → 2011-10-04 A (+1d) |  |  |  | constraint finish no earlier than 2011-10-05 → start no earlier than 2011-10-03; resources ThanhCV → TuTM [25%] |
| 48 | Study book "How to build a full CMS project" and give idea |  | 2011-10-03 A → 2011-10-04 A (+1d) |  |  |  | constraint finish no earlier than 2011-10-05 → start no earlier than 2011-10-03; resources ThaoNX → KhoaVT [25%] |
| 49 | Study book "How to build a full CMS project" and give idea |  | 2011-10-03 A → 2011-10-04 A (+1d) |  |  |  | constraint finish no earlier than 2011-10-05 → start no earlier than 2011-10-03; resources ThiVT → HuyDV [25%] |
| 50 | **Analysis and Requirement** | 2011-10-06 A → 2011-10-06 | 2011-10-06 A → 2011-10-06 | 4d → 1d | 100% → 0% | none → 114d |  |
| 51 | Review Software Specification | 2011-10-06 A → 2011-10-06 | 2011-10-06 A → 2011-10-06 | 4d → 1d | 100% → 0% | none → 20d | resources All Team → All Team [25%] |
| 52 | **Design** | 2011-10-06 A → 2011-09-15 A (-21d) | 2011-10-27 → 2011-10-24 (-3d) | 73d → 34d | 96% → 98% | 271d → 99d |  |
| 53 | **Screen Component Design** | 2011-10-06 A → 2011-09-15 A (-21d) |  | 8d → 20d |  |  |  |
| 54 | Menu Manager |  | 2011-10-06 A → 2011-10-07 A (+1d) |  |  |  | constraint finish no earlier than 2011-10-07 → start no earlier than 2011-10-06; resources ThiVT → ThiVT [25%] |
| 55 | Configuration |  | 2011-10-06 A → 2011-10-07 A (+1d) |  |  |  | constraint finish no earlier than 2011-10-07 → start no earlier than 2011-10-06; resources ThaoNX → ThaoNX [25%] |
| 56 | **Content Manager** | 2011-10-06 A → 2011-09-15 A (-21d) | 2011-10-06 A → 2011-10-07 A (+1d) | 2d → 20d |  |  | resources DungDV + DucNH + TuTM → none |
| 57 | Acticle Manager + Copy Acticle + Move Acticle + Global Configuration Pop-up Window | 2011-10-06 A → 2011-09-15 A (-21d) | 2011-10-06 A → 2011-09-16 A (-20d) |  |  |  | constraint finish no earlier than 2011-10-07 → none; resources DucNH → DucNH [25%] |
| 58 | Section Manager + Category Manager + Front Page Manager |  | 2011-10-06 A → 2011-10-07 A (+1d) |  |  |  | constraint finish no earlier than 2011-10-07 → start no earlier than 2011-10-06; resources DungDV → DungDV [25%] |
| 59 | Section Edit + Category Edit + Acticle Edit |  | 2011-10-06 A → 2011-10-07 A (+1d) |  |  |  | constraint finish no earlier than 2011-10-07 → start no earlier than 2011-10-06; resources TuTM → TuTM [25%] |
| 60 | **User Manager** |  | 2011-10-06 A → 2011-10-07 A (+1d) |  |  |  | resources ThanhCV + KhoaVT → none |
| 61 | User Manager |  | 2011-10-06 A → 2011-10-07 A (+1d) |  |  |  | constraint finish no earlier than 2011-10-07 → start no earlier than 2011-10-06; resources KhoaVT → KhoaVT [25%] |
| 62 | New User + Edit User |  | 2011-10-06 A → 2011-10-07 A (+1d) |  |  |  | constraint finish no earlier than 2011-10-07 → start no earlier than 2011-10-06; resources ThanhCV → ThanhCV [25%] |
| 63 | **Media Manager** |  | 2011-10-06 A → 2011-10-07 A (+1d) |  |  |  | resources HuyNVK + HienTT → none |
| 64 | Media Manager |  | 2011-10-06 A → 2011-10-07 A (+1d) |  |  |  | constraint finish no earlier than 2011-10-07 → start no earlier than 2011-10-06; resources HienTT → HienTT [25%] |
| 65 | Media Option |  | 2011-10-06 A → 2011-10-07 A (+1d) |  |  |  | constraint finish no earlier than 2011-10-07 → start no earlier than 2011-10-06; resources HuyNVK → HuyNVK [25%] |
| 67 | Layout and navigation |  |  |  |  |  | constraint finish no earlier than 2011-10-07 → start no earlier than 2011-10-06; resources HuyDV → HuyDV [25%] |
| 69 | Menu Manager |  |  |  |  |  | resources ThiVT → ThiVT [25%] |
| 73 | Section Manager + Category Manager + Front Page Manager |  |  |  |  |  | constraint start no earlier than 2011-10-14 → start no earlier than 2011-10-06; resources DungDV → DungDV [25%] |
| 74 | Section Edit + Category Edit + Acticle Edit |  |  |  |  |  | constraint start no earlier than 2011-10-14 → start no earlier than 2011-10-06; resources TuTM → TuTM [25%] |
| 76 | User Manager |  |  |  |  |  | constraint start no earlier than 2011-10-14 → start no earlier than 2011-10-06; resources KhoaVT → KhoaVT [25%] |
| 77 | New User + Edit User |  |  |  |  |  | constraint start no earlier than 2011-10-14 → start no earlier than 2011-10-06; resources ThanhCV → ThanhCV [25%] |

| ID | Task | Start | Finish | Duration | Total float | Predecessors | Other |
| --- | --- | --- | --- | --- | --- | --- | --- |
| 80 | **Study PHP, MySQL and Zend Frame Work** |  |  | 10d → 3d |  |  |  |
| 81 | Demo login using PHP, MySQL |  | 2011-10-14 A → 2011-10-15 A (+1d) |  |  |  | resources TuanVA → BaoNDD [25%] |
| 82 | Demo login using PHP, MySQL |  | 2011-10-14 A → 2011-10-15 A (+1d) |  |  |  | resources BaoNDD → TuanVA [25%] |
| 83 | Study Book "How to build a full CMS" and give idea. |  |  | 2d → 1d |  |  | resources TuanVA → BaoNDD [25%] |
| 84 | Study Book "How to build a full CMS" and give idea. |  |  | 2d → 1d |  |  | resources BaoNDD → TuanVA [25%] |
| 85 | **Screen Prototype** | 2011-10-15 A → 2011-09-15 A (-30d) | 2011-10-15 A → 2011-10-07 A (-8d) | 3d → 20d |  |  |  |
| 86 | Menu Manager | 2011-10-15 A → 2011-10-06 A (-9d) | 2011-10-15 A → 2011-10-07 A (-8d) | 3d → 2d |  |  | constraint start no earlier than 2011-10-15 → start no earlier than 2011-10-06; resources ThiVT → ThiVT [25%] |
| 88 | **Content Manager** | 2011-10-15 A → 2011-09-15 A (-30d) | 2011-10-15 A → 2011-10-07 A (-8d) | 3d → 20d |  |  |  |
| 90 | Section Manager + Category Manager + Front Page Manager | 2011-10-15 A → 2011-10-06 A (-9d) | 2011-10-15 A → 2011-10-07 A (-8d) | 3d → 2d |  |  | constraint start no earlier than 2011-10-15 → start no earlier than 2011-10-06; resources DungDV → DungDV [25%] |
| 91 | Section Edit + Category Edit + Acticle Edit | 2011-10-15 A → 2011-10-06 A (-9d) | 2011-10-15 A → 2011-10-07 A (-8d) | 3d → 2d |  |  | constraint start no earlier than 2011-10-15 → start no earlier than 2011-10-06; resources TuTM → TuTM [25%] |
| 92 | **User Manager** | 2011-10-15 A → 2011-10-06 A (-9d) | 2011-10-15 A → 2011-10-07 A (-8d) | 3d → 2d |  |  |  |
| 93 | User Manager | 2011-10-15 A → 2011-10-06 A (-9d) | 2011-10-15 A → 2011-10-07 A (-8d) | 3d → 2d |  |  | constraint start no earlier than 2011-10-15 → start no earlier than 2011-10-06; resources KhoaVT → KhoaVT [25%] |
| 94 | New User + Edit User | 2011-10-15 A → 2011-10-06 A (-9d) | 2011-10-15 A → 2011-10-07 A (-8d) | 3d → 2d |  |  | constraint start no earlier than 2011-10-15 → start no earlier than 2011-10-06; resources ThanhCV → ThanhCV [25%] |
| 95 | **Media Manager** | 2011-10-15 A → 2011-10-06 A (-9d) | 2011-10-15 A → 2011-10-07 A (-8d) | 3d → 2d |  |  |  |
| 96 | Media Manager | 2011-10-15 A → 2011-10-06 A (-9d) | 2011-10-15 A → 2011-10-07 A (-8d) | 3d → 2d |  |  | constraint start no earlier than 2011-10-15 → start no earlier than 2011-10-06; resources HienTT → HienTT [25%] |
| 97 | Media Option | 2011-10-15 A → 2011-10-06 A (-9d) | 2011-10-15 A → 2011-10-07 A (-8d) | 3d → 2d |  |  | constraint start no earlier than 2011-10-15 → start no earlier than 2011-10-06; resources HuyNVK → HuyNVK [25%] |
| 100 | **Mapping screen items to Database** | 2011-10-18 A → 2011-09-15 A (-33d) | 2011-10-18 A → 2011-10-06 A (-12d) | 1d → 19d |  |  |  |
| 101 | Menu Manager | 2011-10-18 A → 2011-10-06 A (-12d) | 2011-10-18 A → 2011-10-06 A (-12d) |  |  |  | constraint start no earlier than 2011-10-18 → start no earlier than 2011-10-06; resources ThiVT → ThiVT [25%] |
| 103 | **Content Manager** | 2011-10-18 A → 2011-09-15 A (-33d) | 2011-10-18 A → 2011-10-06 A (-12d) | 1d → 19d |  |  |  |
| 105 | Section Manager + Category Manager + Front Page Manager | 2011-10-18 A → 2011-10-06 A (-12d) | 2011-10-18 A → 2011-10-06 A (-12d) |  |  |  | constraint start no earlier than 2011-10-18 → start no earlier than 2011-10-06; resources DungDV → DungDV [25%] |
| 106 | Section Edit + Category Edit + Acticle Edit | 2011-10-18 A → 2011-10-06 A (-12d) | 2011-10-18 A → 2011-10-06 A (-12d) |  |  |  | constraint start no earlier than 2011-10-18 → start no earlier than 2011-10-06; resources TuTM → TuTM [25%] |
| 107 | **User Manager** | 2011-10-18 A → 2011-10-06 A (-12d) | 2011-10-18 A → 2011-10-06 A (-12d) |  |  |  |  |
| 108 | User Manager | 2011-10-18 A → 2011-10-06 A (-12d) | 2011-10-18 A → 2011-10-06 A (-12d) |  |  |  | constraint start no earlier than 2011-10-18 → start no earlier than 2011-10-06; resources KhoaVT → KhoaVT [25%] |
| 109 | New User + Edit User | 2011-10-18 A → 2011-10-06 A (-12d) | 2011-10-18 A → 2011-10-06 A (-12d) |  |  |  | constraint start no earlier than 2011-10-18 → start no earlier than 2011-10-06; resources ThanhCV → ThanhCV [25%] |
| 110 | **Media Manager** | 2011-10-18 A → 2011-10-06 A (-12d) | 2011-10-18 A → 2011-10-06 A (-12d) |  |  |  |  |
| 111 | Media Manager | 2011-10-18 A → 2011-10-06 A (-12d) | 2011-10-18 A → 2011-10-06 A (-12d) |  |  |  | constraint start no earlier than 2011-10-18 → start no earlier than 2011-10-06; resources TuanVA → TuanVA [25%] |
| 112 | Media Option | 2011-10-18 A → 2011-10-06 A (-12d) | 2011-10-18 A → 2011-10-06 A (-12d) |  |  |  | constraint start no earlier than 2011-10-18 → start no earlier than 2011-10-06; resources BaoNDD → BaoNDD [25%] |
| 115 | **Events** | 2011-10-19 A → 2011-09-15 A (-34d) | 2011-10-19 A → 2011-10-06 A (-13d) | 1d → 19d |  |  |  |
| 116 | Menu Manager | 2011-10-19 A → 2011-10-06 A (-13d) | 2011-10-19 A → 2011-10-06 A (-13d) |  |  |  | constraint start no earlier than 2011-10-19 → start no earlier than 2011-10-06; resources ThiVT → ThiVT [25%] |
| 118 | **Content Manager** | 2011-10-19 A → 2011-09-15 A (-34d) | 2011-10-19 A → 2011-10-06 A (-13d) | 1d → 19d |  |  |  |
| 120 | Section Manager + Category Manager + Front Page Manager | 2011-10-19 A → 2011-10-06 A (-13d) | 2011-10-19 A → 2011-10-06 A (-13d) |  |  |  | constraint start no earlier than 2011-10-19 → start no earlier than 2011-10-06; resources DungDV → DungDV [25%] |
| 121 | Section Edit + Category Edit + Acticle Edit | 2011-10-19 A → 2011-10-06 A (-13d) | 2011-10-19 A → 2011-10-06 A (-13d) |  |  |  | constraint start no earlier than 2011-10-19 → start no earlier than 2011-10-06; resources TuTM → TuTM [25%] |
| 122 | **User Manager** | 2011-10-19 A → 2011-10-06 A (-13d) | 2011-10-19 A → 2011-10-06 A (-13d) |  |  |  |  |
| 123 | User Manager | 2011-10-19 A → 2011-10-06 A (-13d) | 2011-10-19 A → 2011-10-06 A (-13d) |  |  |  | constraint start no earlier than 2011-10-19 → start no earlier than 2011-10-06; resources KhoaVT → KhoaVT [25%] |
| 124 | New User + Edit User | 2011-10-19 A → 2011-10-06 A (-13d) | 2011-10-19 A → 2011-10-06 A (-13d) |  |  |  | constraint start no earlier than 2011-10-19 → start no earlier than 2011-10-06; resources ThanhCV → ThanhCV [25%] |
| 125 | **Media Manager** | 2011-10-19 A → 2011-10-06 A (-13d) | 2011-10-19 A → 2011-10-06 A (-13d) |  |  |  |  |
| 126 | Media Manager | 2011-10-19 A → 2011-10-06 A (-13d) | 2011-10-19 A → 2011-10-06 A (-13d) |  |  |  | constraint start no earlier than 2011-10-19 → start no earlier than 2011-10-06; resources TuanVA → TuanVA [25%] |
| 127 | Media Option | 2011-10-19 A → 2011-10-06 A (-13d) | 2011-10-19 A → 2011-10-06 A (-13d) |  |  |  | constraint start no earlier than 2011-10-19 → start no earlier than 2011-10-06; resources BaoNDD → BaoNDD [25%] |
| 178 | Testing | 2011-11-21 → 2012-02-01 (+72d) | 2011-11-21 → 2012-02-14 (+85d) | 4d? → 12d | 180d → 2d | Development → none | constraint none → start no earlier than 2012-02-01 |
| 179 | Documentation | 2011-11-22 → 2012-02-15 (+85d) | 2011-11-22 → 2012-02-16 (+86d) | 4d? → 2d | 180d → 0d | 178 → none | constraint none → start no earlier than 2012-02-15 |

## Version 6 (saved 2011-11-02)

Note of the change: Commit PM's documents and update project Plan

Last finish 2012-02-16 → 2012-02-17 (+1d). Complete tasks 104 → 135.

Added:

| ID | Task | Duration | Start | Finish | Constraint | Resources |
| --- | --- | --- | --- | --- | --- | --- |
| 178 | **Review Screen Interface** | 2d | 2011-10-31 A | 2011-11-01 A |  |  |
| 179 | **Global Config + Menu Manager + User Manager + Content Manager** | 2d | 2011-10-31 A | 2011-11-01 A |  | ThaoNX + DungDV + ThiVT + KhoaVT [25%] |
| 180 | Make Review Schedule | 1d | 2011-10-31 A | 2011-10-31 A |  | ThaoNX + DungDV + ThiVT + KhoaVT [25%] |
| 181 | Do review, write log to DefectLog | 1d | 2011-11-01 A | 2011-11-01 A | start no earlier than 2011-11-01 | ThaoNX + DungDV + ThiVT + KhoaVT [25%] |
| 182 | **Article Manager + New & Edit User + Language Manager + Login** | 2d | 2011-10-31 A | 2011-11-01 A |  | ThanhCV + DucNH + LinhTA + HuyDV [25%] |
| 183 | Make Review Schedule | 1d | 2011-10-31 A | 2011-10-31 A | start no earlier than 2011-10-31 | ThanhCV + DucNH + LinhTA + HuyDV [25%] |
| 184 | Do review, write log to DefectLog | 1d | 2011-11-01 A | 2011-11-01 A | start no earlier than 2011-11-01 | ThanhCV + DucNH + LinhTA + HuyDV [25%] |
| 185 | **Media Manager + Media Option + Section Edit + Acticle Edit + Category Edit** | 2d | 2011-10-31 A | 2011-11-01 A |  | TuanVA + BaoNDD + TuTM [25%] |
| 186 | Make Review Schedule | 1d | 2011-10-31 A | 2011-10-31 A | start no earlier than 2011-10-31 | TuanVA + BaoNDD + TuTM [25%] |
| 187 | Do review, write log to DefectLog | 1d | 2011-11-01 A | 2011-11-01 A |  | TuanVA + BaoNDD + TuTM [25%] |

Changed:

| ID | Task | Start | Finish | Duration | Complete | Total float | Other |
| --- | --- | --- | --- | --- | --- | --- | --- |
| 1 | **C&C Project** |  | 2012-02-16 → 2012-02-17 (+1d) | 133d → 134d | 69% → 94% |  |  |
| 50 | **Analysis and Requirement** | 2011-10-06 A | 2011-10-06 A |  | 0% → 100% | 114d → none |  |
| 51 | Review Software Specification | 2011-10-06 A | 2011-10-06 A |  | 0% → 100% | 20d → none |  |
| 52 | **Design** |  | 2011-10-24 A |  | 98% → 100% | 99d → none |  |
| 130 | **Review Screen Detailed Design** |  | 2011-10-21 A |  | 99% → 100% | 0d → none |  |
| 131 | **Global Config + Menu Manager + User Manager + Content Manager** |  | 2011-10-21 A |  | 99% → 100% | 0d → none |  |
| 134 | **Acticle Manager + New & Edit User + Language Manager + Login** |  | 2011-10-21 A |  | 99% → 100% | 0d → none |  |
| 137 | **Media Manager + Media Option + Section Edit + Acticle Edit + Category Edit** |  | 2011-10-21 A |  | 99% → 100% | 0d → none | resources TuanVA + BaoNDD + TuTM [25%] → LinhTA [25%] |
| 140 | **Screen Transition** | 2011-10-24 A | 2011-10-24 A |  | 0% → 100% | 99d → none |  |
| 141 | ContentManager + GlobalConfiguration | 2011-10-24 A | 2011-10-24 A |  | 0% → 100% | 99d → none |  |
| 142 | MenuManager + MediaManager + UserManager | 2011-10-24 A | 2011-10-24 A |  | 0% → 100% | 99d → none |  |
| 143 | **Development** | 2011-10-24 A | 2011-10-29 → 2011-11-01 A (+3d) | 6d → 8d | 0% → 100% | 94d → none |  |
| 144 | **Code Screen Interface using Zend Form** | 2011-10-24 A | 2011-10-29 A |  | 0% → 100% | 94d → none |  |
| 145 | **MediaOption + NewMenu** | 2011-10-24 A | 2011-10-29 A |  | 0% → 100% | 94d → none |  |
| 146 | Study Zend From and Code the first screen | 2011-10-24 A | 2011-10-26 A |  | 0% → 100% | 94d → none |  |
| 147 | Finish all remaining screens | 2011-10-27 A | 2011-10-29 A |  | 0% → 100% | 92d → none |  |
| 148 | **SectionManager + CategoryManager + FrontPageManager + ActicleEdit** | 2011-10-24 A | 2011-10-29 A |  | 0% → 100% | 94d → none |  |
| 149 | Study Zend From and Code the first screen | 2011-10-24 A | 2011-10-26 A |  | 0% → 100% | 94d → none |  |
| 150 | Finish all remaining screens | 2011-10-27 A | 2011-10-29 A |  | 0% → 100% | 92d → none |  |
| 151 | **ActicleManager + ActicleCopy + ActicleGlobalConfig** | 2011-10-24 A | 2011-10-29 A |  | 0% → 100% | 94d → none |  |
| 152 | Study Zend From and Code the first screen | 2011-10-24 A | 2011-10-26 A |  | 0% → 100% | 94d → none |  |
| 153 | Finish all remaining screens | 2011-10-27 A | 2011-10-29 A |  | 0% → 100% | 92d → none |  |
| 154 | **Layout for admin module** | 2011-10-24 A | 2011-10-29 A |  | 0% → 100% | 94d → none |  |
| 155 | Study Zend From and Code the first screen | 2011-10-24 A | 2011-10-26 A |  | 0% → 100% | 94d → none |  |
| 156 | Finish all remaining screens | 2011-10-27 A | 2011-10-29 A |  | 0% → 100% | 92d → none |  |
| 157 | **LanguageManager + Login** | 2011-10-24 A | 2011-10-29 A |  | 0% → 100% | 94d → none |  |
| 158 | Study Zend From and Code the first screen | 2011-10-24 A | 2011-10-26 A |  | 0% → 100% | 94d → none |  |
| 159 | Finish all remaining screens | 2011-10-27 A | 2011-10-29 A |  | 0% → 100% | 92d → none |  |
| 160 | **New&EditUser + EditMenuItem** | 2011-10-24 A | 2011-10-29 A |  | 0% → 100% | 94d → none |  |
| 161 | Study Zend From and Code the first screen | 2011-10-24 A | 2011-10-26 A |  | 0% → 100% | 94d → none |  |
| 162 | Finish all remaining screens | 2011-10-27 A | 2011-10-29 A |  | 0% → 100% | 92d → none |  |
| 163 | **Global Configuration** | 2011-10-24 A | 2011-10-29 A |  | 0% → 100% | 94d → none |  |
| 164 | Study Zend From and Code the first screen | 2011-10-24 A | 2011-10-26 A |  | 0% → 100% | 94d → none |  |
| 165 | Finish all remaining screens | 2011-10-27 A | 2011-10-29 A |  | 0% → 100% | 92d → none |  |
| 166 | **MenuManager + MenuItemManager** | 2011-10-24 A | 2011-10-29 A |  | 0% → 100% | 94d → none |  |
| 167 | Study Zend From and Code the first screen | 2011-10-24 A | 2011-10-26 A |  | 0% → 100% | 94d → none |  |
| 168 | Finish all remaining screens | 2011-10-27 A | 2011-10-29 A |  | 0% → 100% | 92d → none |  |
| 169 | **SectionEdit + ActicleEdit + MoveActicle** | 2011-10-24 A | 2011-10-29 A |  | 0% → 100% | 94d → none |  |
| 170 | Study Zend From and Code the first screen | 2011-10-24 A | 2011-10-26 A |  | 0% → 100% | 94d → none |  |
| 171 | Finish all remaining screens | 2011-10-27 A | 2011-10-29 A |  | 0% → 100% | 92d → none |  |
| 172 | **UserManager + NewMenuItem** | 2011-10-24 A | 2011-10-29 A |  | 0% → 100% | 94d → none |  |
| 173 | Study Zend From and Code the first screen | 2011-10-24 A | 2011-10-26 A |  | 0% → 100% | 94d → none |  |
| 174 | Finish all remaining screens | 2011-10-27 A | 2011-10-29 A |  | 0% → 100% | 92d → none |  |
| 175 | **MediaManager + CopyMenu + MoveMenu** | 2011-10-24 A | 2011-10-29 A |  | 0% → 100% | 94d → none |  |
| 176 | Study Zend From and Code the first screen | 2011-10-24 A | 2011-10-26 A |  | 0% → 100% | 94d → none |  |
| 177 | Finish all remaining screens | 2011-10-27 A | 2011-10-29 A |  | 0% → 100% | 92d → none |  |
| 189 | Documentation |  | 2012-02-16 → 2012-02-17 (+1d) | 2d → 3d |  |  | resources none → BaoNDD [25%] |

## Version 7 (saved 2011-11-03)

Note of the change: Update task của BaoNDD, TuanVA, DungDV, DucNH, LinhTA

Last finish 2012-02-17 → 2011-11-07 (-102d).

Added:

| ID | Task | Duration | Start | Finish | Predecessors | Constraint | Resources |
| --- | --- | --- | --- | --- | --- | --- | --- |
| 190 | **Complete code screen interface using Zend Form** | 3d? | 2011-11-04 | 2011-11-07 |  |  |  |
| 191 | **Site Setting & System Setting** | 3d? | 2011-11-04 | 2011-11-07 |  |  | HuyNVK [25%] |
| 192 | Insert Toolboxs for Site Setting & System Setting form | 1d | 2011-11-04 | 2011-11-04 |  | start no earlier than 2011-11-04 | HuyNVK [25%] |
| 193 | Insert actions for Toolboxs of Site Setting & System Setting form | 2d? | 2011-11-05 | 2011-11-07 | 192 | start no earlier than 2011-11-05 | HuyNVK [25%] |
| 194 | **Study how to using Zend_DB and make a LAB** | 3d? | 2011-11-04 | 2011-11-07 |  |  | LinhTA [25%] |
| 195 | Study Zend_DB | 1d? | 2011-11-04 | 2011-11-04 |  | start no earlier than 2011-11-04 | LinhTA [25%] |
| 196 | Make a lab ( How to using Zend_DB ) and a demo | 2d? | 2011-11-05 | 2011-11-07 | 195 | start no earlier than 2011-11-05 | LinhTA [25%] |
| 197 | Study Zend_Auth and make a LAB | 1d? | 2011-11-05 | 2011-11-05 |  | start no earlier than 2011-11-05 | DungDV [25%] |
| 198 | Make a lab : How to using Zend Decorartor with Zend Form | 1d? | 2011-11-05 | 2011-11-05 |  | start no earlier than 2011-11-05 | DucNH [25%] |
| 199 | **Study Zend_Acl and make a LAB** | 2d? | 2011-11-04 | 2011-11-05 |  |  | TuanVA [25%] |
| 200 | Study Zend_Acl | 1d? | 2011-11-04 | 2011-11-04 |  | start no earlier than 2011-11-04 | TuanVA [25%] |
| 201 | Make a Lab ( How to using Zend_Acl) | 1d? | 2011-11-05 | 2011-11-05 | 200 | start no earlier than 2011-11-05 | TuanVA [25%] |
| 202 | Design template for Admin | 3d? | 2011-11-04 | 2011-11-07 |  | start no earlier than 2011-11-04 | BaoNDD [25%] |
| 203 | **New&Edit user + Login** | 3d? | 2011-11-04 | 2011-11-07 |  |  | HienTT [25%] |
| 204 | Insert Filter and Validate for NewUser, EditUser, Login Form | 3d? | 2011-11-04 | 2011-11-07 |  | start no earlier than 2011-11-04 | HienTT [25%] |
| 205 | **Menu Item Edit + Menu New + Category Edit** | 3d? | 2011-11-04 | 2011-11-07 |  |  | ThiVT [25%] |
| 206 | Insert Validate & Filter for Menu Item Edit, Menu New, Category Edit form | 3d? | 2011-11-04 | 2011-11-07 |  | start no earlier than 2011-11-04 | ThiVT [25%] |
| 207 | **Section New + Section Edit + Category New** | 3d? | 2011-11-04 | 2011-11-07 |  |  | TuTM [25%] |
| 208 | Insert Filter & Vadilate for Section New, Section Edit, Category New form | 3d? | 2011-11-04 | 2011-11-07 |  | start no earlier than 2011-11-04 | TuTM [25%] |
| 209 | **UserManager + NewMenuItem** | 1d? | 2011-11-04 | 2011-11-04 |  |  | KhoaVT [25%] |
| 210 | Complete UserManager, NewMenuItem forms | 1d? | 2011-11-04 | 2011-11-04 |  | start no earlier than 2011-11-04 | KhoaVT [25%] |
| 211 | **SectionManager + CategoryManager + FrontPageManager + ActicleEdit** | 1d? | 2011-11-04 | 2011-11-04 |  |  | DungDV [25%] |
| 212 | Complete SectionManager , CategoryManager , FrontPageManager , ActicleEdit forms | 1d? | 2011-11-04 | 2011-11-04 |  | start no earlier than 2011-11-04 | DungDV [25%] |
| 213 | **ActicleManager + ActicleCopy + ActicleGlobalConfig** | 1d? | 2011-11-04 | 2011-11-04 |  |  | DucNH [25%] |
| 214 | Complete ActicleManager, ActicleCopy , ActicleGlobalConfig form | 1d? | 2011-11-04 | 2011-11-04 |  | start no earlier than 2011-11-04 | DucNH [25%] |
| 215 | Design Logic Diagram & Design DB | 3d | 2011-11-04 | 2011-11-07 |  | start no earlier than 2011-11-04 | HuyDV [25%] |

Changed:

| ID | Task | Start | Finish | Duration | Complete | Total float | Other |
| --- | --- | --- | --- | --- | --- | --- | --- |
| 1 | **C&C Project** |  | 2012-02-17 → 2011-11-07 (-102d) | 134d → 46d? | 94% → 88% |  |  |
| 143 | **Development** | 2011-10-24 A → 2011-09-15 A (-39d) | 2011-11-01 A → 2011-11-07 (+6d) | 8d → 46d? | 100% → 68% | none → 0d |  |
| 188 | Testing | 2012-02-01 → 2011-09-15 (-139d) | 2012-02-14 → 2011-09-17 (-150d) | 12d → 3d |  | 3d → 43d | constraint start no earlier than 2012-02-01 → none; resources none → BaoNDD |
| 189 | Documentation | 2012-02-15 → 2011-09-15 (-153d) | 2012-02-17 → 2011-09-17 (-153d) |  |  | 0d → 43d | constraint start no earlier than 2012-02-15 → none |

## Version 8 (saved 2011-11-07)

Last finish 2011-11-07 → 2011-11-10 (+3d). Complete tasks 135 → 152.

Added:

| ID | Task | Duration | Start | Finish | Constraint | Resources |
| --- | --- | --- | --- | --- | --- | --- |
| 208 | Using Zend_Acl | 3d? | 2011-11-07 | 2011-11-09 | start no earlier than 2011-11-07 | TuanVA [25%] |
| 212 | Find all Filter & Vadilate in these form and write it on DefectLog file | 1d? | 2011-11-04 A | 2011-11-04 A | start no earlier than 2011-11-04 | ThiVT [25%] |
| 213 | Study Filter & Validate and make a simple LAB | 1d? | 2011-11-05 A | 2011-11-05 A | start no earlier than 2011-11-05 | ThiVT [25%] |
| 214 | Insert Validate & Filter for these form | 2d? | 2011-11-07 A | 2011-11-08 A | start no earlier than 2011-11-07 | ThiVT [25%] |
| 217 | Study Filter & Validate and make a simple LAB | 1d? | 2011-11-05 A | 2011-11-05 A | start no earlier than 2011-11-05 | TuTM [25%] |
| 218 | Insert Validate & Filter for these form | 2d? | 2011-11-07 A | 2011-11-08 A | start no earlier than 2011-11-07 | TuTM [25%] |
| 220 | Insert forms : ActicleManager, ActicleCopy, ActicleGlobalConfig, SectionManager,CategoryManager,FrontPageManager,ActicleEdit in main source(source3) | 2d? | 2011-11-05 | 2011-11-07 | start no earlier than 2011-11-05 | KhoaVT [25%] |
| 221 | Design DataGridView for UserManager form and make a LAB | 3d? | 2011-11-08 | 2011-11-10 | start no earlier than 2011-11-08 | HienTT [25%] |
| 222 | Design DataGridView for Article Manager form and make a LAB | 3d? | 2011-11-07 | 2011-11-09 | start no earlier than 2011-11-07 | DucNH [25%] |
| 223 | Complete design admin template | 2d? | 2011-11-08 | 2011-11-09 | start no earlier than 2011-11-08 | BaoNDD [25%] |
| 224 | Complete design front page | 2d? | 2011-11-08 | 2011-11-09 | start no earlier than 2011-11-08 | HuyNVK [25%] |
| 225 | Format again FormMenuItem_New_New | 2d? | 2011-11-08 | 2011-11-09 | start no earlier than 2011-11-08 | KhoaVT [25%] |
| 226 | Design Database Menu + User | 2d? | 2011-11-08 | 2011-11-09 | start no earlier than 2011-11-08 | ThiVT [25%] |
| 227 | Design Database : Article, Category, Section,Contac, Plugins, Weblink | 2d? | 2011-11-08 | 2011-11-09 | start no earlier than 2011-11-08 | TuTM [25%] |
| 228 | Config to run Source3 and edit SectionManager , CategoryManager , FrontPageManager , ActicleEdit forms in Source3 | 1d? | 2011-11-07 | 2011-11-07 | start no earlier than 2011-11-07 | DungDV [25%] |
| 229 | Study Multi Language using Zend Framework | 3d | 2011-11-08 | 2011-11-10 | start no earlier than 2011-11-08 | HuyDV [25%] |

Removed: 204 Insert Filter and Validate for NewUser, EditUser, Login Form; 206 Insert Validate & Filter for Menu Item Edit, Menu New, Category Edit form

Changed:

| ID | Task | Start | Finish | Duration | Complete | Total float | Other |
| --- | --- | --- | --- | --- | --- | --- | --- |
| 1 | **C&C Project** |  | 2011-11-07 → 2011-11-10 (+3d) | 46d? → 49d? |  |  |  |
| 143 | **Development** |  | 2011-11-07 → 2011-11-10 (+3d) | 46d? → 49d? | 68% → 72% |  |  |
| 190 | **Complete code screen interface using Zend Form** | 2011-11-04 A | 2011-11-07 → 2011-11-10 (+3d) | 3d? → 6d? | 0% → 44% |  |  |
| 191 | **SectionManager + CategoryManager + FrontPageManager + ActicleEdit** | 2011-11-04 A | 2011-11-04 A |  | 0% → 100% | 2d → none | resources DungDV [25%] → none |
| 192 | Complete SectionManager , CategoryManager , FrontPageManager , ActicleEdit forms | 2011-11-04 A | 2011-11-04 A |  | 0% → 100% | 2d → none |  |
| 193 | **ActicleManager + ActicleCopy + ActicleGlobalConfig** | 2011-11-04 A | 2011-11-04 A |  | 0% → 100% | 2d → none | resources DucNH [25%] → none |
| 194 | Complete ActicleManager, ActicleCopy , ActicleGlobalConfig form | 2011-11-04 A | 2011-11-04 A |  | 0% → 100% | 2d → none |  |
| 195 | **UserManager + NewMenuItem** | 2011-11-04 A | 2011-11-04 A |  | 0% → 100% | 2d → none | resources KhoaVT [25%] → none |
| 196 | Complete UserManager, NewMenuItem forms | 2011-11-04 A | 2011-11-04 A |  | 0% → 100% | 2d → none |  |
| 197 | **Site Setting & System Setting** | 2011-11-04 A | 2011-11-07 A |  | 0% → 100% | 0d → none | resources HuyNVK [25%] → none |
| 198 | Insert Toolboxs for Site Setting & System Setting form | 2011-11-04 A | 2011-11-04 A |  | 0% → 100% | 0d → none | resources HuyNVK [25%] → HienTT [25%] |
| 199 | Insert actions for Toolboxs of Site Setting & System Setting form | 2011-11-05 A | 2011-11-07 A |  | 0% → 100% | 0d → none | resources HuyNVK [25%] → HienTT [25%] |
| 200 | **Study how to using Zend_DB and make a LAB** |  |  |  |  | 0d → 3d | resources LinhTA [25%] → none |
| 203 | Study Zend_Auth and make a LAB | 2011-11-05 A | 2011-11-05 A |  | 0% → 100% | 1d → none |  |
| 204 | Make a lab : How to using Zend Decorartor with Zend Form | 2011-11-05 A | 2011-11-05 A |  | 0% → 100% | 1d → none |  |
| 205 | **Study Zend_Acl and make a LAB** | 2011-11-04 A | 2011-11-05 → 2011-11-09 (+4d) | 2d? → 5d? | 0% → 40% |  | resources TuanVA [25%] → none |
| 206 | Study Zend_Acl | 2011-11-04 A | 2011-11-04 A |  | 0% → 100% | 1d → none |  |
| 207 | Make a Lab ( How to using Zend_Acl) | 2011-11-05 A | 2011-11-05 A |  | 0% → 100% | 1d → none |  |
| 209 | Design admin template | 2011-11-04 A | 2011-11-07 A |  | 0% → 100% | 0d → none | was named Design template for Admin |
| 210 | Design Front page | 2011-11-04 A | 2011-11-07 A |  | 0% → 100% | 0d → none | was named New&Edit user + Login; constraint none → start no earlier than 2011-11-04; resources HienTT [25%] → HuyNVK [25%] |
| 211 | **Menu Item Edit + Menu New + Category Edit + Login** | 2011-11-04 A | 2011-11-07 → 2011-11-08 A (+1d) | 3d? → 4d? | 0% → 100% | 0d → none | was named Menu Item Edit + Menu New + Category Edit; resources ThiVT [25%] → none |
| 215 | **Section New + Section Edit + Category New + NewUser+ EditUser** | 2011-11-04 A | 2011-11-07 → 2011-11-08 A (+1d) | 3d? → 4d? | 0% → 100% | 0d → none | was named Section New + Section Edit + Category New; resources TuTM [25%] → none |
| 216 | Find all Filter & Vadilate in these form and write it on DefectLog file | 2011-11-04 A | 2011-11-07 → 2011-11-04 A (-3d) | 3d? → 1d? | 0% → 100% | 0d → none | was named Insert Filter & Vadilate for Section New, Section Edit, Category New form |

## Version 9 (saved 2011-11-09)

Note of the change: cập nhật file C&CProject_MasterPlan

Last finish stays 2011-11-10. Complete tasks 152 → 158.

Added:

| ID | Task | Duration | Start | Finish | Predecessors | Constraint | Resources |
| --- | --- | --- | --- | --- | --- | --- | --- |
| 214 | Study Filter & Validate and make a simple Lab | 1d? | 2011-11-05 A | 2011-11-05 A |  | start no earlier than 2011-11-05 | TuTM [25%] |
| 227 | **Study how to using Zend_DB and make a LAB** | 3d? | 2011-11-08 | 2011-11-10 |  |  |  |
| 228 | Study Zend_DB | 1d? | 2011-11-08 | 2011-11-08 |  | start no earlier than 2011-11-08 | LinhTA [25%] |
| 229 | Make a lab ( How to using Zend_DB ) and a demo | 2d? | 2011-11-09 | 2011-11-10 | 228 | start no earlier than 2011-11-05 | LinhTA [25%] |
| 230 | **Using Zend Auth & Zend_Acl** | 4d? | 2011-11-07 | 2011-11-10 |  |  | TuanVA [25%] |
| 231 | Using Zend_Auth to protect admin page | 2d? | 2011-11-07 | 2011-11-08 |  | start no earlier than 2011-11-07 | TuanVA [25%] |

Removed: 217 Study Filter & Validate and make a simple LAB

Changed:

| ID | Task | Start | Finish | Duration | Complete | Total float | Predecessors | Other |
| --- | --- | --- | --- | --- | --- | --- | --- | --- |
| 1 | **C&C Project** |  |  |  | 88% → 91% |  |  |  |
| 143 | **Development** | 2011-09-15 A → 2011-10-24 A (+39d) |  | 49d? → 16d? | 72% → 82% |  |  |  |
| 188 | **Complete code screen interface using Zend Form** |  |  |  | 44% → 61% |  |  |  |
| 202 | Make a lab : How to using Zend Decorartor with Zend Form |  |  |  |  |  | none → 201 |  |
| 203 | **Study Zend_Acl and make a LAB** |  | 2011-11-09 → 2011-11-05 A (-4d) | 5d? → 2d? | 40% → 100% | 1d → none |  |  |
| 211 | Insert Validate & Filter for these form |  |  |  |  |  | none → 210 |  |
| 215 | Insert Validate & Filter for these form |  |  |  |  |  | none → 214 |  |
| 217 | Insert forms : ActicleManager, ActicleCopy, ActicleGlobalConfig, SectionManager,CategoryManager,FrontPageManager,ActicleEdit in main source(source3) | 2011-11-05 A | 2011-11-07 A |  | 0% → 100% | 3d → none |  |  |
| 221 | Complete design front page | 2011-11-08 A | 2011-11-09 A |  | 0% → 100% | 1d → none |  |  |
| 222 | Format again FormMenuItem_New_New |  | 2011-11-09 → 2011-11-10 (+1d) | 2d? → 3d |  | 1d → 0d |  |  |
| 223 | Design Database Menu + User | 2011-11-08 A | 2011-11-09 A |  | 0% → 100% | 1d → none |  |  |
| 224 | Design Database : Article, Category, Section,Contac, Plugins, Weblink | 2011-11-08 A | 2011-11-09 A |  | 0% → 100% | 1d → none |  |  |
| 225 | Config to run Source3 and edit SectionManager , CategoryManager , FrontPageManager , ActicleEdit forms in Source3 | 2011-11-07 A | 2011-11-07 → 2011-11-08 A (+1d) | 1d? → 2d? | 0% → 100% | 3d → none |  |  |
| 226 | Study Multi Language using Zend Framework | 2011-11-08 A | 2011-11-10 A |  | 0% → 100% | 0d → none |  |  |
| 232 | Using Zend_Acl | 2011-11-07 → 2011-11-09 (+2d) | 2011-11-09 → 2011-11-10 (+1d) | 3d? → 2d? |  | 1d → 0d |  | constraint start no earlier than 2011-11-07 → start no earlier than 2011-11-09 |

## Version 10 (saved 2011-11-16)

Note of the change: Update file C&CProject_MasterPlan.mpp

Last finish 2011-11-10 → 2011-11-18 (+8d). Complete tasks 158 → 178.

Added:

| ID | Task | Duration | Start | Finish | Predecessors | Constraint | Resources |
| --- | --- | --- | --- | --- | --- | --- | --- |
| 233 | **Tasks of week 8** | 7d? | 2011-11-11 A | 2011-11-18 |  |  |  |
| 234 | Code Model Front News + Front Products | 1d? | 2011-11-11 A | 2011-11-11 A |  | start no earlier than 2011-11-11 | HuyDV [25%] |
| 235 | Design Front page | 3d? | 2011-11-12 A | 2011-11-15 A |  | start no earlier than 2011-11-12 | HuyDV [25%] |
| 236 | Code Admin Model News | 2d? | 2011-11-11 A | 2011-11-12 A |  | start no earlier than 2011-11-11 | LinhTA [25%] |
| 237 | Code Admin Model Products | 2d? | 2011-11-11 A | 2011-11-12 A |  | start no earlier than 2011-11-11 | DungDV [25%] |
| 238 | List the basic properties of product page | 0.5d? | 2011-11-11 A | 2011-11-11 A |  | start no earlier than 2011-11-11 | TuTM [25%] |
| 239 | List properties of News page | 0.5d? | 2011-11-11 A | 2011-11-11 A |  | start no earlier than 2011-11-11 | ThiVT [25%] |
| 240 | Design New News + Edit News Form | 1.5d? | 2011-11-11 A | 2011-11-12 A |  | start no earlier than 2011-11-11 | TuTM [25%] |
| 241 | Design New Products + Edit Products | 1.5d? | 2011-11-11 A | 2011-11-12 A |  | start no earlier than 2011-11-11 | ThiVT [25%] |
| 242 | Design News Manager form | 3d? | 2011-11-11 A | 2011-11-14 A |  | start no earlier than 2011-11-11 | DucNH [25%] |
| 243 | Design Products Manager form | 3d? | 2011-11-11 A | 2011-11-14 A |  | start no earlier than 2011-11-11 | HienTT [25%] |
| 244 | Study Text Editor and Demo | 4d? | 2011-11-11 A | 2011-11-15 A |  | start no earlier than 2011-11-11 | TuanVA [25%] |
| 245 | Study Text Editor and Demo | 4d? | 2011-11-11 A | 2011-11-15 A |  | start no earlier than 2011-11-11 | BaoNDD [25%] |
| 246 | CSS for New News + Edit News form | 2d? | 2011-11-14 A | 2011-11-15 A | 240 | start no earlier than 2011-11-13 | KhoaVT [25%] |
| 247 | CSS for New Products + Edit Products form | 2d? | 2011-11-14 A | 2011-11-15 A | 241 | start no earlier than 2011-11-14 | HuyNVK [25%] |
| 249 | Continue to develop News manager form | 2d? | 2011-11-15 | 2011-11-16 |  | start no earlier than 2011-11-15 | DucNH [25%] |
| 250 | Continue to develop Products manager form | 2d? | 2011-11-15 A | 2011-11-16 A |  | start no earlier than 2011-11-15 | HienTT [25%] |
| 251 | Test + fix + add function to Admin Model News | 2d? | 2011-11-14 | 2011-11-15 |  | start no earlier than 2011-11-14 | LinhTA [25%] |
| 252 | Test + fix + add function to Admin Model Products | 2d? | 2011-11-14 | 2011-11-15 |  | start no earlier than 2011-11-14 | DungDV [25%] |
| 253 | Code products_new_action | 1d? | 2011-11-14 | 2011-11-14 |  | start no earlier than 2011-11-14 | HuyNVK [25%] |
| 254 | Code products_edit_action | 2d? | 2011-11-14 | 2011-11-15 |  | start no earlier than 2011-11-14 | TuTM [25%] |
| 255 | Code news_new_action | 1d? | 2011-11-15 | 2011-11-15 |  | start no earlier than 2011-11-15 | BaoNDD [25%] |
| 256 | Code news_edit_action | 2d? | 2011-11-14 | 2011-11-15 |  | start no earlier than 2011-11-14 | ThiVT [25%] |
| 257 | Design & code action to Delete Product screen | 1d? | 2011-11-15 | 2011-11-15 |  | start no earlier than 2011-11-15 | DungDV [25%] |
| 258 | Design & code action to Delete News screen | 1d? | 2011-11-15 | 2011-11-15 |  | start no earlier than 2011-11-15 | LinhTA [25%] |
| 259 | Embed text editor on to Source3 | 3d? | 2011-11-16 | 2011-11-18 |  | start no earlier than 2011-11-16 | TuanVA [25%] |
| 260 | Design Logo & symbols | 1d | 2011-11-14 A | 2011-11-14 A |  | start no earlier than 2011-11-14 | KhoaVT [25%] |

Changed:

| ID | Task | Start | Finish | Duration | Complete | Total float |
| --- | --- | --- | --- | --- | --- | --- |
| 1 | **C&C Project** |  | 2011-11-10 → 2011-11-18 (+8d) | 49d? → 56d? | 91% → 89% |  |
| 143 | **Development** |  | 2011-11-10 → 2011-11-18 (+8d) | 16d? → 23d? | 82% → 81% |  |
| 188 | **Complete code screen interface using Zend Form** |  |  |  | 61% → 70% | 0d → 7d |
| 208 | **Menu Item Edit + Menu New + Category Edit + Login** |  | 2011-11-08 A → 2011-11-07 A (-1d) | 4d? → 3d? |  |  |
| 211 | Insert Validate & Filter for these form |  | 2011-11-08 A → 2011-11-07 A (-1d) | 2d? → 1d |  |  |
| 212 | **Section New + Section Edit + Category New + NewUser+ EditUser** |  | 2011-11-08 A → 2011-11-07 A (-1d) | 4d? → 3d? |  |  |
| 215 | Insert Validate & Filter for these form |  | 2011-11-08 A → 2011-11-07 A (-1d) | 2d? → 1d |  |  |
| 219 | Design DataGridView for Article Manager form and make a LAB |  | 2011-11-09 → 2011-11-10 (+1d) | 3d? → 4d |  | 1d → 4d |
| 227 | **Study how to using Zend_DB and make a LAB** | 2011-11-08 A | 2011-11-10 A |  | 0% → 100% | 0d → none |
| 228 | Study Zend_DB | 2011-11-08 A | 2011-11-08 A |  | 0% → 100% | 0d → none |
| 229 | Make a lab ( How to using Zend_DB ) and a demo | 2011-11-09 A | 2011-11-10 A |  | 0% → 100% | 0d → none |
| 230 | **Using Zend Auth & Zend_Acl** | 2011-11-07 A | 2011-11-10 A |  | 0% → 100% | 0d → none |
| 231 | Using Zend_Auth to protect admin page | 2011-11-07 A | 2011-11-08 A |  | 0% → 100% | 2d → none |
| 232 | Using Zend_Acl | 2011-11-09 A | 2011-11-10 A |  | 0% → 100% | 0d → none |

## Version 11 (saved 2011-11-20)

Note of the change: Update file C&CProject_MasterPlan.mpp

Last finish 2011-11-18 → 2011-11-23 (+5d).

Added:

| ID | Task | Duration | Start | Finish | Constraint | Resources |
| --- | --- | --- | --- | --- | --- | --- |
| 248 | Embed texteditor into Source3 | 4d | 2011-11-16 | 2011-11-19 | start no earlier than 2011-11-16 | TuanVA [25%] |
| 249 | **Task of week 9** | 9d? | 2011-11-14 A | 2011-11-23 |  |  |
| 250 | Review model News | 2d | 2011-11-18 | 2011-11-19 | start no earlier than 2011-11-18 | DucNH [25%]; ThiVT [25%] |
| 251 | Review model Product | 2d | 2011-11-18 | 2011-11-19 | start no earlier than 2011-11-18 | TuTM [25%]; HuyNVK [25%] |
| 252 | Review Action Delete News | 1d? | 2011-11-18 | 2011-11-18 | start no earlier than 2011-11-18 | DungDV [25%] |
| 253 | Review Action Delete Product | 1d? | 2011-11-18 | 2011-11-18 | start no earlier than 2011-11-18 | LinhTA [25%] |
| 254 | Review Action Edit News | 3d | 2011-11-21 | 2011-11-23 | start no earlier than 2011-11-21 | TuTM [25%] |
| 255 | Review Action Edit Product | 2d? | 2011-11-21 | 2011-11-22 | start no earlier than 2011-11-21 | ThiVT [25%] |
| 256 | Review Action New News | 2d? | 2011-11-21 | 2011-11-22 | start no earlier than 2011-11-21 | HuyNVK [25%] |
| 257 | Review Action New Product | 2d? | 2011-11-18 | 2011-11-19 | start no earlier than 2011-11-18 | KhoaVT [25%] |
| 258 | Review Form News Manager | 1d? | 2011-11-18 | 2011-11-18 | start no earlier than 2011-11-18 | HienTT [25%] |
| 259 | Review Form Product Manager | 1d? | 2011-11-21 | 2011-11-21 | start no earlier than 2011-11-21 | DucNH [25%] |
| 260 | Text edior | 4d | 2011-11-18 | 2011-11-22 | start no earlier than 2011-11-18 | BaoNDD [25%] |
| 261 | Config Block | 1d? | 2011-11-18 | 2011-11-18 | start no earlier than 2011-11-18 | HuyDV [25%] |
| 262 | Popup Image manager | 4d | 2011-11-19 | 2011-11-23 | start no earlier than 2011-11-19 | HuyDV [25%] |

Changed:

| ID | Task | Finish | Duration | Complete | Total float |
| --- | --- | --- | --- | --- | --- |
| 1 | **C&C Project** | 2011-11-18 → 2011-11-23 (+5d) | 56d? → 60d? | 89% → 82% |  |
| 143 | **Development** | 2011-11-18 → 2011-11-23 (+5d) | 23d? → 27d? | 81% → 69% |  |
| 233 | **Tasks of week 8** | 2011-11-18 → 2011-11-19 (+1d) | 7d? → 8d? | 66% → 88% | 0d → 3d |
